Actual Duration,Activity ID,Activity Name,WBS,Project ID,Original Duration,Remaining Duration,BL Project Start,BL Project Finish,Start,Finish,Free Float,Total Float,Variance - BL1 Nonlabor Units,Variance - BL Project Nonlabor Units,Actual Nonlabor Units,Remaining Nonlabor Units,Predecessors,Successors,Budgeted Nonlabor Units,Activity % Complete,Critical,Longest Path
0,KD-MS-1000,Project Start Date,The Big - P.01 - UP-24-MAY-26.KD.MI,The Big - P.01 - UP-24-MAY-26,0,0,11-Sep-25,,11-Sep-25 A,,,,0,0,0,0,,"KD-MS-1010, KD-MS-1020, P-MS-1020, P-MS-1010, P-MS-1030, P-MS-1040, P-MS-1050, P-MS-1000, KD-MOB-1000, KD-MOB-1010, KD-MOB-1020, P-MS-1060",0,100%,No,Yes
18,P-MS-1020,Submittal for Soil Replacement,The Big - P.01 - UP-24-MAY-26.P.MS.SS,The Big - P.01 - UP-24-MAY-26,18,0,14-Sep-25,4-Oct-25,14-Sep-25 A,04-Oct-25 A,,,0,0,0,0,KD-MS-1000,"P-MA-1010, P-MA-1010",0,100%,No,Yes
18,P-MS-1040,Submittal for Waterproofing,The Big - P.01 - UP-24-MAY-26.P.MS.SS,The Big - P.01 - UP-24-MAY-26,18,0,23-Sep-25,14-Oct-25,23-Sep-25 A,14-Oct-25 A,,,0,0,0,0,KD-MS-1000,"P-MA-1040, P-MA-1040",0,100%,No,Yes
18,P-MS-1050,Submittal for cold applied damp-proofing,The Big - P.01 - UP-24-MAY-26.P.MS.SS,The Big - P.01 - UP-24-MAY-26,18,0,23-Sep-25,14-Oct-25,23-Sep-25 A,14-Oct-25 A,,,0,0,0,0,KD-MS-1000,"P-MA-1050, P-MA-1050",0,100%,No,No
10,P-MA-1010,Approval for Soil Replacement,The Big - P.01 - UP-24-MAY-26.P.MS.SA,The Big - P.01 - UP-24-MAY-26,10,0,5-Oct-25,16-Oct-25,05-Oct-25 A,16-Oct-25 A,,,0,0,0,0,"P-MS-1020, P-MS-1020",P-MPOS-1010,0,100%,No,Yes
10,P-MA-1040,Approval for Waterproofing,The Big - P.01 - UP-24-MAY-26.P.MS.SA,The Big - P.01 - UP-24-MAY-26,10,0,15-Oct-25,26-Oct-25,15-Oct-25 A,26-Oct-25 A,,,0,0,0,0,"P-MS-1040, P-MS-1040",P-MPOS-1040,0,100%,No,Yes
10,P-MA-1050,Approval for cold applied damp-proofing,The Big - P.01 - UP-24-MAY-26.P.MS.SA,The Big - P.01 - UP-24-MAY-26,10,0,15-Oct-25,26-Oct-25,15-Oct-25 A,26-Oct-25 A,,,0,0,0,0,"P-MS-1050, P-MS-1050",P-MPOS-1050,0,100%,No,No
2,P-MPOS-1010,P.O for  Soil Replacement,The Big - P.01 - UP-24-MAY-26.P.PC.PO,The Big - P.01 - UP-24-MAY-26,2,0,18-Oct-25,19-Oct-25,18-Oct-25 A,19-Oct-25 A,,,0,0,0,0,P-MA-1010,P-MDEL-1010,0,100%,No,Yes
2,P-MPOS-1040,P.O for  Waterproofing,The Big - P.01 - UP-24-MAY-26.P.PC.PO,The Big - P.01 - UP-24-MAY-26,2,0,27-Oct-25,28-Oct-25,27-Oct-25 A,28-Oct-25 A,,,0,0,0,0,P-MA-1040,P-MDEL-1040,0,100%,No,Yes
2,P-MPOS-1050,P.O for cold applied damp-proofing,The Big - P.01 - UP-24-MAY-26.P.PC.PO,The Big - P.01 - UP-24-MAY-26,2,0,27-Oct-25,28-Oct-25,27-Oct-25 A,28-Oct-25 A,,,0,0,0,0,P-MA-1050,P-MDEL-1050,0,100%,No,No
2,P-MDEL-1010,Delivery for Soil Replacement,The Big - P.01 - UP-24-MAY-26.P.PC.DS,The Big - P.01 - UP-24-MAY-26,2,0,27-Oct-25,28-Oct-25,17-Oct-25 A,19-Oct-25 A,,,0,0,0,0,P-MPOS-1010,"CON-EW-B01-1000, CON-EW-B02-1000, CON-EW-B03-1000, CON-EW-B04-1000",0,100%,No,Yes
10,P-MDEL-1040,Delivery for Waterproofing,The Big - P.01 - UP-24-MAY-26.P.PC.DS,The Big - P.01 - UP-24-MAY-26,28,0,29-Oct-25,25-Nov-25,30-Nov-25 A,10-Dec-25 A,,,0,0,0,0,P-MPOS-1040,"CON-B01-FOOT-1030, CON-B02-FOOT-1030, CON-B04-FOOT-1030, CON-B03-FOOT-1030, CON-B04-WT-1050, CON-B02-SOG-1020, CON-B01-SOG-1020, CON-B04-SOG-1020, CON-B03-SOG-1020",0,100%,No,Yes
0,P-MDEL-1050,Delivery for cold applied damp-proofing,The Big - P.01 - UP-24-MAY-26.P.PC.DS,The Big - P.01 - UP-24-MAY-26,49,49,29-Oct-25,16-Dec-25,5-May-26,22-Jun-26,0,186,0,0,0,0,P-MPOS-1050,"CON-B01-FOOT-1110, CON-B02-FOOT-1110, CON-B04-FOOT-1110, CON-B03-FOOT-1110",0,0%,No,No
13,CON-EW-B01-1000,Soil Replacement & Leveling & Compaction (B01),The Big - P.01 - UP-24-MAY-26.CON.EW.B01,The Big - P.01 - UP-24-MAY-26,15,0,3-Nov-25,19-Nov-25,30-Oct-25 A,14-Nov-25 A,,,0,0,140,0,"KD-MOB-1020, E-APP-B01-REP-1000, P-MDEL-1010","CON-EW-B01-1010, CON-EW-B01-1010, AB-SUB-B01-REP-1000, CON-EW-B02-1000",140,100%,No,Yes
12,CON-EW-B01-1010,Soil Compaction Test (B01),The Big - P.01 - UP-24-MAY-26.CON.EW.B01,The Big - P.01 - UP-24-MAY-26,15,0,6-Nov-25,23-Nov-25,15-Nov-25 A,29-Nov-25 A,,,0,0,20,0,"CON-EW-B01-1000, CON-EW-B01-1000","CON-B01-FOOT-1000, AB-SUB-B01-REP-1000",20,100%,No,Yes
9,CON-EW-B02-1000,Soil Replacement & Leveling & Compaction (B02),The Big - P.01 - UP-24-MAY-26.CON.EW.B02,The Big - P.01 - UP-24-MAY-26,20,0,12-Nov-25,4-Dec-25,30-Oct-25 A,10-Nov-25 A,,,0,0,140,0,"E-APP-B02-REP-1000, P-MDEL-1010, CON-EW-B01-1000","CON-EW-B02-1010, CON-EW-B02-1010, AB-SUB-B02-REP-1000, CON-EW-B03-1000",140,100%,No,No
12,CON-EW-B02-1010,Soil Compaction Test (B02),The Big - P.01 - UP-24-MAY-26.CON.EW.B02,The Big - P.01 - UP-24-MAY-26,20,0,16-Nov-25,8-Dec-25,15-Nov-25 A,29-Nov-25 A,,,0,0,20,0,"CON-EW-B02-1000, CON-EW-B02-1000","CON-B02-FOOT-1000, AB-SUB-B02-REP-1000",20,100%,No,No
3,CON-B01-FOOT-1000,Shuttering for PC Raft (B01) (footing),The Big - P.01 - UP-24-MAY-26.CON.P02.B01.SUB.F,The Big - P.01 - UP-24-MAY-26,1,0,26-Nov-25,26-Nov-25,26-Nov-25 A,30-Nov-25 A,,,0,0,0,0,"CON-EW-B01-1010, E-APP-B01-FOOT-1000",CON-B01-FOOT-1010,0,100%,No,Yes
3,CON-B04-WT-1050,Waterproofing & Ins. Protection works (B04) (Water Tank),The Big - P.01 - UP-24-MAY-26.CON.P01.B04.SUB.3.2,The Big - P.01 - UP-24-MAY-26,2,0,26-Nov-25,27-Nov-25,12-Dec-25 A,16-Dec-25 A,,,0,0,0,0,"P-MDEL-1040, E-APP-B04-FOOT-1000, CON-B04-WT-1040",CON-B04-WT-1060,0,100%,No,No
1,CON-B01-FOOT-1010,Pouring for PC Raft (B01) (footing),The Big - P.01 - UP-24-MAY-26.CON.P02.B01.SUB.F,The Big - P.01 - UP-24-MAY-26,1,0,27-Nov-25,27-Nov-25,30-Nov-25 A,01-Dec-25 A,,,0,0,0,0,"CON-B01-FOOT-1000, P-MDEL-1020","CON-B01-FOOT-1020, AB-SUB-B01-FOOT-1000",0,100%,No,Yes
8,CON-B01-FOOT-1020,Curing for PC Raft (B01) (footing),The Big - P.01 - UP-24-MAY-26.CON.P02.B01.SUB.F,The Big - P.01 - UP-24-MAY-26,3,0,28-Nov-25,30-Nov-25,02-Dec-25 A,10-Dec-25 A,,,0,0,0,0,CON-B01-FOOT-1010,"CON-B01-FOOT-1030, CON-B01-FOOT-1030",0,100%,No,Yes
2,CON-B04-WT-1060,Shuttering for RC Raft (B04) (Water Tank),The Big - P.01 - UP-24-MAY-26.CON.P01.B04.SUB.3.2,The Big - P.01 - UP-24-MAY-26,4,0,29-Nov-25,2-Dec-25,01-Jan-26 A,04-Jan-26 A,,,0,0,0,0,"CON-B04-WT-1050, E-APP-B04-WT-1010","CON-B04-WT-1070, AB-SUB-B04-WT-1010, CON-B04-WT-1070",0,100%,No,No
18,CON-EW-B03-1000,Soil Replacement & Leveling & Compaction (B03),The Big - P.01 - UP-24-MAY-26.CON.EW.B03,The Big - P.01 - UP-24-MAY-26,20,0,29-Nov-25,21-Dec-25,10-Oct-25 A,01-Nov-25 A,,,0,0,140,0,"E-APP-B03-REP-1000, P-MDEL-1010, CON-EW-B02-1000","CON-EW-B03-1010, CON-EW-B03-1010, AB-SUB-B03-REP-1000",140,100%,No,No
7,CON-B01-FOOT-1030,Waterproofing & Ins. Protection works (B01) (footing),The Big - P.01 - UP-24-MAY-26.CON.P02.B01.SUB.F,The Big - P.01 - UP-24-MAY-26,2,0,1-Dec-25,2-Dec-25,12-Dec-25 A,21-Dec-25 A,,,0,0,0,0,"CON-B01-FOOT-1020, P-MDEL-1040, E-APP-B01-FOOT-1030, CON-B01-FOOT-1020","AB-SUB-B01-FOOT-1010, CON-B01-FOOT-1040",0,100%,No,Yes
11,CON-EW-B03-1010,Soil Compaction Test (B03),The Big - P.01 - UP-24-MAY-26.CON.EW.B03,The Big - P.01 - UP-24-MAY-26,20,0,2-Dec-25,24-Dec-25,20-Nov-25 A,03-Dec-25 A,,,0,0,20,0,"CON-EW-B03-1000, CON-EW-B03-1000","CON-B03-FOOT-1000, AB-SUB-B03-REP-1000",20,100%,No,No
10,CON-B01-FOOT-1040,Shuttering for RC Raft & Footings (B01) (footing),The Big - P.01 - UP-24-MAY-26.CON.P02.B01.SUB.F,The Big - P.01 - UP-24-MAY-26,12,0,3-Dec-25,16-Dec-25,05-Feb-26 A,17-Feb-26 A,,,0,0,0,0,"E-APP-B01-FOOT-1010, CON-B01-FOOT-1030","CON-B01-FOOT-1050, CON-B01-FOOT-1050, CON-B01-FOOT-1060",0,100%,No,Yes
6,CON-B04-WT-1070,RFT for RC Raft (B04) (Water Tank),The Big - P.01 - UP-24-MAY-26.CON.P01.B04.SUB.3.2,The Big - P.01 - UP-24-MAY-26,5,0,3-Dec-25,8-Dec-25,10-Jan-26 A,17-Jan-26 A,,,0,0,0,0,"CON-B04-WT-1060, E-APP-B04-WT-1020, CON-B04-WT-1060, P-MDEL-1000","CON-B04-WT-1080, AB-SUB-B04-WT-1020",0,100%,No,No
11,CON-B01-FOOT-1050,RFT for RC Raft & Footings (B01) (footing),The Big - P.01 - UP-24-MAY-26.CON.P02.B01.SUB.F,The Big - P.01 - UP-24-MAY-26,14,0,6-Dec-25,18-Dec-25,05-Feb-26 A,17-Feb-26 A,,,0,0,12,0,"CON-B01-FOOT-1040, E-APP-B01-FOOT-1020, CON-B01-FOOT-1040, P-MDEL-1000",CON-B01-FOOT-1090,12,100%,No,No
2,CON-B02-FOOT-1000,Shuttering for PC Raft (B02) (footing),The Big - P.01 - UP-24-MAY-26.CON.P02.B02.SUB.F,The Big - P.01 - UP-24-MAY-26,1,0,9-Dec-25,9-Dec-25,27-Nov-25 A,30-Nov-25 A,,,0,0,0,0,"E-APP-B02-FOOT-1000, CON-EW-B02-1010, P-MDEL-1020","CON-B02-FOOT-1010, AB-SUB-B02-FOOT-1000",0,100%,No,No
0,CON-B04-WT-1080,Pouring for RC Raft (B04) (Water Tank),The Big - P.01 - UP-24-MAY-26.CON.P01.B04.SUB.3.2,The Big - P.01 - UP-24-MAY-26,2,0,9-Dec-25,10-Dec-25,28-Feb-26 A,28-Feb-26 A,,,0,0,0,0,"CON-B04-WT-1070, P-MDEL-1030",CON-B04-WT-1090,0,100%,No,No
52,CON-B01-FOOT-1070,RFT for Columns & Walls Below SOG (B01) (footing),The Big - P.01 - UP-24-MAY-26.CON.P02.B01.SUB.F,The Big - P.01 - UP-24-MAY-26,8,1,9-Dec-25,17-Dec-25,28-Feb-26 A,6-May-26,0,-108,0,0,6.8,1.2,"CON-B01-FOOT-1060, CON-B01-FOOT-1060, E-APP-B01-FOOT-1020, P-MDEL-1000",CON-B01-FOOT-1080,8,85%,Yes,Yes
1,CON-B02-FOOT-1010,Pouring for PC Raft (B02) (footing),The Big - P.01 - UP-24-MAY-26.CON.P02.B02.SUB.F,The Big - P.01 - UP-24-MAY-26,1,0,10-Dec-25,10-Dec-25,30-Nov-25 A,01-Dec-25 A,,,0,0,0,0,"CON-B02-FOOT-1000, P-MDEL-1030","CON-B02-FOOT-1020, AB-SUB-B02-FOOT-1000",0,100%,No,No
4,CON-B02-FOOT-1020,Curing for PC Raft (B02) (footing),The Big - P.01 - UP-24-MAY-26.CON.P02.B02.SUB.F,The Big - P.01 - UP-24-MAY-26,3,0,11-Dec-25,13-Dec-25,02-Dec-25 A,06-Dec-25 A,,,0,0,0,0,CON-B02-FOOT-1010,"CON-B02-FOOT-1030, CON-B02-FOOT-1030",0,100%,No,No
3,CON-B04-WT-1090,Curing & Deshuttering for RC Raft (B04) (Water Tank),The Big - P.01 - UP-24-MAY-26.CON.P01.B04.SUB.3.2,The Big - P.01 - UP-24-MAY-26,3,0,11-Dec-25,13-Dec-25,01-Mar-26 A,04-Mar-26 A,,,0,0,0,0,CON-B04-WT-1080,CON-B04-WT-1100,0,100%,No,No
28,CON-B04-WT-1100,Shuttering for Walls (B04) (Water Tank),The Big - P.01 - UP-24-MAY-26.CON.P01.B04.SUB.3.2,The Big - P.01 - UP-24-MAY-26,8,0,13-Dec-25,21-Dec-25,07-Mar-26 A,14-Apr-26 A,,,0,0,0,0,"CON-B04-WT-1090, E-APP-B04-WT-1030","CON-B04-WT-1110, AB-SUB-B04-WT-1030, CON-B04-WT-1110",0,100%,No,No
27,CON-B04-WT-1110,RFT for Walls (B04) (Water Tank),The Big - P.01 - UP-24-MAY-26.CON.P01.B04.SUB.3.2,The Big - P.01 - UP-24-MAY-26,8,0,13-Dec-25,21-Dec-25,08-Mar-26 A,14-Apr-26 A,,,0,0,0,0,"CON-B04-WT-1100, CON-B04-WT-1100, E-APP-B04-WT-1030, P-MDEL-1000","CON-B04-WT-1120, CON-B04-WT-1130, AB-SUB-B04-WT-1030",0,100%,No,No
2,CON-B02-FOOT-1030,Waterproofing & Ins. Protection works (B02) (footing),The Big - P.01 - UP-24-MAY-26.CON.P02.B02.SUB.F,The Big - P.01 - UP-24-MAY-26,2,0,14-Dec-25,15-Dec-25,18-Dec-25 A,21-Dec-25 A,,,0,0,0,0,"CON-B02-FOOT-1020, P-MDEL-1040, E-APP-B02-FOOT-1030, CON-B02-FOOT-1020","CON-B02-FOOT-1040, CON-B02-FOOT-1040",0,100%,No,No
9,CON-B02-FOOT-1040,Shuttering for RC Raft & Footings (B02) (footing),The Big - P.01 - UP-24-MAY-26.CON.P02.B02.SUB.F,The Big - P.01 - UP-24-MAY-26,10,0,17-Dec-25,28-Dec-25,10-Jan-26 A,20-Jan-26 A,,,0,0,0,0,"CON-B02-FOOT-1030, E-APP-B02-FOOT-1010, CON-B02-FOOT-1030","CON-B02-FOOT-1050, AB-SUB-B02-FOOT-1010, CON-B02-FOOT-1050, CON-B02-FOOT-1060",0,100%,No,No
2,CON-B04-WT-1120,Installation for Waterstop Insulation (B04) (Water Tank),The Big - P.01 - UP-24-MAY-26.CON.P01.B04.SUB.3.2,The Big - P.01 - UP-24-MAY-26,4,0,17-Dec-25,21-Dec-25,15-Apr-26 A,17-Apr-26 A,,,0,0,0,0,CON-B04-WT-1110,CON-B04-WT-1130,0,100%,No,No
43,CON-B01-FOOT-1090,Pouring for RC Raft & Footings (B01) (footing),The Big - P.01 - UP-24-MAY-26.CON.P02.B01.SUB.F,The Big - P.01 - UP-24-MAY-26,2,0,20-Dec-25,21-Dec-25,07-Mar-26 A,30-Apr-26 A,,,0,0,0,0,"CON-B01-FOOT-1050, P-MDEL-1030","CON-B01-FOOT-1100, AB-SUB-B01-FOOT-1020, AB-SUB-B01-FOOT-1030",0,100%,No,No
4,CON-B02-FOOT-1050,RFT for RC Raft & Footings (B02) (footing),The Big - P.01 - UP-24-MAY-26.CON.P02.B02.SUB.F,The Big - P.01 - UP-24-MAY-26,10,0,20-Dec-25,30-Dec-25,17-Jan-26 A,21-Jan-26 A,,,0,0,1,0,"CON-B02-FOOT-1040, E-APP-B02-FOOT-1020, CON-B02-FOOT-1040, P-MDEL-1000","CON-B02-FOOT-1090, AB-SUB-B02-FOOT-1020",1,100%,No,No
0,CON-B01-FOOT-1100,Curing & Deshuttering for RC Raft & Footings (B01) (footing),The Big - P.01 - UP-24-MAY-26.CON.P02.B01.SUB.F,The Big - P.01 - UP-24-MAY-26,3,3,22-Dec-25,24-Dec-25,5-May-26,8-May-26,1,-134,0,0,0,0,"CON-B01-FOOT-1090, CON-B01-FOOT-1080","CON-B01-FOOT-1110, CON-B01-BAS02-1000",0,0%,Yes,Yes
2,CON-B04-WT-1130,Pouring for Walls (B04) (Water Tank),The Big - P.01 - UP-24-MAY-26.CON.P01.B04.SUB.3.2,The Big - P.01 - UP-24-MAY-26,2,0,22-Dec-25,23-Dec-25,18-Apr-26 A,20-Apr-26 A,,,0,0,0,0,"CON-B04-WT-1110, P-MDEL-1030, CON-B04-WT-1120","CON-B04-WT-1140, AB-SUB-B04-WT-1030, CON-B04-WT-1140",0,100%,No,No
0,CON-B04-WT-1140,Curing & Deshuttering for Walls (B04) (Water Tank),The Big - P.01 - UP-24-MAY-26.CON.P01.B04.SUB.3.2,The Big - P.01 - UP-24-MAY-26,5,5,22-Dec-25,26-Dec-25,5-May-26,9-May-26,1,-87,0,0,0,0,"CON-B04-WT-1130, CON-B04-WT-1130","CON-B04-WT-1150, CON-B04-WT-1200",0,0%,Yes,No
30,CON-B02-FOOT-1070,RFT for Columns & Walls Below SOG (B02) (footing),The Big - P.01 - UP-24-MAY-26.CON.P02.B02.SUB.F,The Big - P.01 - UP-24-MAY-26,6,0,23-Dec-25,29-Dec-25,28-Jan-26 A,04-Mar-26 A,,,0,0,6,0,"CON-B02-FOOT-1060, CON-B02-FOOT-1060, E-APP-B02-FOOT-1020, P-MDEL-1000",CON-B02-FOOT-1080,6,100%,No,No
2,CON-B03-FOOT-1000,Shuttering for PC Raft (B03) (footing),The Big - P.01 - UP-24-MAY-26.CON.P01.B03.SUB.F,The Big - P.01 - UP-24-MAY-26,1,0,25-Dec-25,25-Dec-25,01-Dec-25 A,03-Dec-25 A,,,0,0,0,0,"E-APP-B03-FOOT-1010, CON-EW-B03-1010, P-MDEL-1020","CON-B03-FOOT-1010, AB-SUB-B03-FOOT-1000",0,100%,No,No
0,CON-B01-BAS02-1000,"Scaffolding works for Walls, Col. & Cores (B01) (Bas 02)",The Big - P.01 - UP-24-MAY-26.CON.P02.B01.SUB.2ndB,The Big - P.01 - UP-24-MAY-26,7,7,25-Dec-25,1-Jan-26,9-May-26,16-May-26,0,-108,0,0,0,0,CON-B01-FOOT-1100,"CON-B01-BAS02-1010, CON-B01-BAS02-1010",0,0%,Yes,Yes
0,CON-B01-BAS02-1010,"RFT for Walls, Col. & Cores (B01) (Bas 02)",The Big - P.01 - UP-24-MAY-26.CON.P02.B01.SUB.2ndB,The Big - P.01 - UP-24-MAY-26,15,15,25-Dec-25,12-Jan-26,9-May-26,25-May-26,0,-108,0,0,0,1,"CON-B01-BAS02-1000, CON-B01-BAS02-1000, E-APP-B01-BAS02-1000, P-MDEL-1170","CON-B01-BAS02-1020, CON-B01-BAS02-1020",1,0%,Yes,Yes
1,CON-B03-FOOT-1010,Pouring for PC Raft (B03) (footing),The Big - P.01 - UP-24-MAY-26.CON.P01.B03.SUB.F,The Big - P.01 - UP-24-MAY-26,1,0,27-Dec-25,27-Dec-25,22-Dec-25 A,23-Dec-25 A,,,0,0,0,0,"CON-B03-FOOT-1000, P-MDEL-1030","CON-B03-FOOT-1020, AB-SUB-B03-FOOT-1000",0,100%,No,No
18,CON-EW-B04-1000,Soil Replacement & Leveling & Compaction (B04),The Big - P.01 - UP-24-MAY-26.CON.EW.B04,The Big - P.01 - UP-24-MAY-26,7,0,27-Dec-25,3-Jan-26,10-Oct-25 A,01-Nov-25 A,,,0,0,84,0,"E-APP-B04-REP-1000, P-MDEL-1010","CON-EW-B04-1010, CON-EW-B04-1010, AB-SUB-B04-REP-1000",84,100%,No,No
0,CON-B03-FOOT-1020,Curing for PC Raft (B03) (footing),The Big - P.01 - UP-24-MAY-26.CON.P01.B03.SUB.F,The Big - P.01 - UP-24-MAY-26,3,0,28-Dec-25,30-Dec-25,23-Dec-25 A,23-Dec-25 A,,,0,0,0,0,CON-B03-FOOT-1010,CON-B03-FOOT-1030,0,100%,No,No
0,CON-B01-BAS02-1020,"Shuttering for Walls, Col. & Cores (B01) (Bas 02)",The Big - P.01 - UP-24-MAY-26.CON.P02.B01.SUB.2ndB,The Big - P.01 - UP-24-MAY-26,15,15,29-Dec-25,15-Jan-26,12-May-26,2-Jun-26,0,-108,0,0,0,0,"CON-B01-BAS02-1010, CON-B01-BAS02-1010, E-APP-B01-BAS02-1000",CON-B01-BAS02-1030,0,0%,Yes,Yes
11,CON-EW-B04-1010,Soil Compaction Test (B04),The Big - P.01 - UP-24-MAY-26.CON.EW.B04,The Big - P.01 - UP-24-MAY-26,7,0,29-Dec-25,5-Jan-26,20-Nov-25 A,03-Dec-25 A,,,0,0,12,0,"CON-EW-B04-1000, CON-EW-B04-1000","CON-B04-FOOT-1000, AB-SUB-B04-REP-1000",12,100%,No,No
0,CON-B02-FOOT-1090,Pouring for RC Raft & Footings (B02) (footing),The Big - P.01 - UP-24-MAY-26.CON.P02.B02.SUB.F,The Big - P.01 - UP-24-MAY-26,2,0,31-Dec-25,1-Jan-26,22-Jan-26 A,22-Jan-26 A,,,0,0,0,0,"CON-B02-FOOT-1050, P-MDEL-1030","CON-B02-FOOT-1100, AB-SUB-B02-FOOT-1020",0,100%,No,No
0,CON-B03-FOOT-1030,Waterproofing & Ins. Protection works (B03) (footing),The Big - P.01 - UP-24-MAY-26.CON.P01.B03.SUB.F,The Big - P.01 - UP-24-MAY-26,2,0,31-Dec-25,1-Jan-26,24-Dec-25 A,24-Dec-25 A,,,0,0,0,0,"P-MDEL-1040, E-APP-B03-FOOT-1000, CON-B03-FOOT-1020","CON-B03-FOOT-1040, CON-B03-FOOT-1040",0,100%,No,No
3,CON-B02-FOOT-1100,Curing & Deshuttering for RC Raft & Footings (B02) (footing),The Big - P.01 - UP-24-MAY-26.CON.P02.B02.SUB.F,The Big - P.01 - UP-24-MAY-26,3,0,2-Jan-26,4-Jan-26,05-Mar-26 A,08-Mar-26 A,,,0,0,0,0,CON-B02-FOOT-1090,"CON-B02-BAS02-1000, CON-B02-FOOT-1110",0,100%,No,No
10,CON-B03-FOOT-1040,Shuttering for RC Raft & Footings (B03) (footing),The Big - P.01 - UP-24-MAY-26.CON.P01.B03.SUB.F,The Big - P.01 - UP-24-MAY-26,10,0,4-Jan-26,15-Jan-26,08-Jan-26 A,20-Jan-26 A,,,0,0,0,0,"CON-B03-FOOT-1030, E-APP-B03-FOOT-1020, CON-B03-FOOT-1030","CON-B03-FOOT-1050, AB-SUB-B03-FOOT-1010, CON-B03-FOOT-1050, CON-B03-FOOT-1060",0,100%,No,No
10,CON-B03-FOOT-1050,RFT for RC Raft & Footings (B03) (footing),The Big - P.01 - UP-24-MAY-26.CON.P01.B03.SUB.F,The Big - P.01 - UP-24-MAY-26,10,0,5-Jan-26,17-Jan-26,10-Jan-26 A,21-Jan-26 A,,,0,0,1,0,"CON-B03-FOOT-1040, E-APP-B03-FOOT-1030, CON-B03-FOOT-1040, P-MDEL-1000","CON-B03-FOOT-1080, AB-SUB-B03-FOOT-1020",1,100%,No,No
7,CON-B02-BAS02-1000,"Scaffolding works for Walls, Col. & Cores (B02) (Bas 02)",The Big - P.01 - UP-24-MAY-26.CON.P02.B02.SUB.2ndB,The Big - P.01 - UP-24-MAY-26,7,0,5-Jan-26,13-Jan-26,19-Apr-26 A,27-Apr-26 A,,,0,0,0,0,CON-B02-FOOT-1100,"CON-B02-BAS02-1010, CON-B03-BAS02-1000, CON-B02-BAS02-1010",0,100%,No,No
12,CON-B02-BAS02-1010,"RFT for Walls, Col. & Cores (B02) (Bas 02)",The Big - P.01 - UP-24-MAY-26.CON.P02.B02.SUB.2ndB,The Big - P.01 - UP-24-MAY-26,12,0,5-Jan-26,19-Jan-26,21-Apr-26 A,04-May-26 A,,,0,0,1,0,"CON-B02-BAS02-1000, CON-B02-BAS02-1000, E-APP-B02-BAS02-1000, P-MDEL-1170","CON-B02-BAS02-1020, CON-B03-BAS02-1010, CON-B02-BAS02-1020",1,100%,No,No
2,CON-B04-FOOT-1000,Shuttering for PC Raft (B04) (footing),The Big - P.01 - UP-24-MAY-26.CON.P01.B04.SUB.1,The Big - P.01 - UP-24-MAY-26,1,0,6-Jan-26,6-Jan-26,01-Dec-25 A,03-Dec-25 A,,,0,0,0,0,"E-APP-B04-FOOT-1010, CON-EW-B04-1010, P-MDEL-1020","CON-B04-FOOT-1010, AB-SUB-B04-FOOT-1000",0,100%,No,No
1,CON-B04-FOOT-1010,Pouring for PC Raft (B04) (footing),The Big - P.01 - UP-24-MAY-26.CON.P01.B04.SUB.1,The Big - P.01 - UP-24-MAY-26,1,0,8-Jan-26,8-Jan-26,22-Dec-25 A,23-Dec-25 A,,,0,0,0,0,"CON-B04-FOOT-1000, P-MDEL-1030","CON-B04-FOOT-1020, AB-SUB-B04-FOOT-1000",0,100%,No,No
0,CON-B04-FOOT-1020,Curing for PC Raft (B04) (footing),The Big - P.01 - UP-24-MAY-26.CON.P01.B04.SUB.1,The Big - P.01 - UP-24-MAY-26,3,0,9-Jan-26,11-Jan-26,23-Dec-25 A,23-Dec-25 A,,,0,0,0,0,CON-B04-FOOT-1010,"CON-B04-FOOT-1030, CON-B04-FOOT-1030",0,100%,No,No
12,CON-B02-BAS02-1020,"Shuttering for Walls, Col. & Cores (B02) (Bas 02)",The Big - P.01 - UP-24-MAY-26.CON.P02.B02.SUB.2ndB,The Big - P.01 - UP-24-MAY-26,12,0,10-Jan-26,22-Jan-26,25-Apr-26 A,07-May-26 A,,,0,0,0,0,"CON-B02-BAS02-1010, CON-B02-BAS02-1010, E-APP-B02-BAS02-1000","CON-B02-BAS02-1030, CON-B03-BAS02-1020",0,100%,No,No
31,CON-B03-FOOT-1060,Shuttering for Columns & Walls Below SOG (B01) (footing),The Big - P.01 - UP-24-MAY-26.CON.P01.B03.SUB.F,The Big - P.01 - UP-24-MAY-26,5,0,10-Jan-26,14-Jan-26,26-Jan-26 A,02-Mar-26 A,,,0,0,0,0,"CON-B03-FOOT-1040, E-APP-B03-FOOT-1020","CON-B03-FOOT-1070, CON-B03-FOOT-1070",0,100%,No,No
0,CON-B04-FOOT-1030,Waterproofing & Ins. Protection works (B04) (footing),The Big - P.01 - UP-24-MAY-26.CON.P01.B04.SUB.1,The Big - P.01 - UP-24-MAY-26,2,0,12-Jan-26,13-Jan-26,24-Dec-25 A,24-Dec-25 A,,,0,0,0,0,"CON-B04-FOOT-1020, P-MDEL-1040, E-APP-B04-FOOT-1000, CON-B04-FOOT-1020","CON-B04-FOOT-1040, AB-SUB-B04-FOOT-1030",0,100%,No,No
31,CON-B03-FOOT-1070,RFT for Columns & Walls Below SOG (B03) (footing),The Big - P.01 - UP-24-MAY-26.CON.P01.B03.SUB.F,The Big - P.01 - UP-24-MAY-26,5,0,12-Jan-26,17-Jan-26,26-Jan-26 A,02-Mar-26 A,,,0,0,0,0,"CON-B03-FOOT-1060, CON-B03-FOOT-1060, E-APP-B03-FOOT-1030, P-MDEL-1000",CON-B03-FOOT-1090,0,100%,No,No
43,CON-B04-FOOT-1040,Shuttering for RC Raft & Footings (B04) (footing),The Big - P.01 - UP-24-MAY-26.CON.P01.B04.SUB.1,The Big - P.01 - UP-24-MAY-26,8,3,14-Jan-26,22-Jan-26,10-Mar-26 A,7-May-26,0,-80,0,0,0,0,"CON-B04-FOOT-1030, E-APP-B04-FOOT-1020","CON-B04-FOOT-1050, AB-SUB-B04-FOOT-1010, CON-B04-FOOT-1050, CON-B04-FOOT-1060",0,65%,Yes,No
43,CON-B04-FOOT-1050,RFT for RC Raft & Footings (B04) (footing),The Big - P.01 - UP-24-MAY-26.CON.P01.B04.SUB.1,The Big - P.01 - UP-24-MAY-26,8,3,15-Jan-26,24-Jan-26,10-Mar-26 A,7-May-26,0,-78,0,0,0.65,0.35,"CON-B04-FOOT-1040, E-APP-B04-FOOT-1030, CON-B04-FOOT-1040, P-MDEL-1000","CON-B04-FOOT-1080, AB-SUB-B04-FOOT-1020",1,65%,Yes,No
0,CON-B01-BAS02-1030,"Pouring for Walls, Col. & Cores (B01) (Bas 02)",The Big - P.01 - UP-24-MAY-26.CON.P02.B01.SUB.2ndB,The Big - P.01 - UP-24-MAY-26,2,2,17-Jan-26,18-Jan-26,3-Jun-26,4-Jun-26,0,-108,0,0,0,0,"CON-B01-BAS02-1020, P-MDEL-1030","CON-B01-BAS02-1040, AB-SUB-B01-BAS2-1000, CON-B01-BAS02-1060",0,0%,Yes,Yes
0,CON-B03-FOOT-1080,Pouring for RC Raft & Footings (B03) (footing),The Big - P.01 - UP-24-MAY-26.CON.P01.B03.SUB.F,The Big - P.01 - UP-24-MAY-26,1,0,18-Jan-26,18-Jan-26,21-Jan-26 A,21-Jan-26 A,,,0,0,0,0,"CON-B03-FOOT-1050, P-MDEL-1030","CON-B03-FOOT-1100, AB-SUB-B03-FOOT-1020",0,100%,No,No
1,CON-B03-FOOT-1090,Pouring Columns & Walls Below SOG (B01) (footing),The Big - P.01 - UP-24-MAY-26.CON.P01.B03.SUB.F,The Big - P.01 - UP-24-MAY-26,1,0,18-Jan-26,18-Jan-26,02-Mar-26 A,03-Mar-26 A,,,0,0,0,0,CON-B03-FOOT-1070,CON-B03-FOOT-1100,0,100%,No,No
3,CON-B03-FOOT-1100,Curing & Deshuttering for RC Raft & Footings (B03) (footing),The Big - P.01 - UP-24-MAY-26.CON.P01.B03.SUB.F,The Big - P.01 - UP-24-MAY-26,3,0,19-Jan-26,21-Jan-26,04-Mar-26 A,07-Mar-26 A,,,0,0,0,0,"CON-B03-FOOT-1080, CON-B03-FOOT-1090","CON-B03-FOOT-1110, CON-B03-BAS02-1000",0,100%,No,No
0,CON-B01-BAS02-1040,Shuttering for Slabs & Beams (B01) (Bas 02),The Big - P.01 - UP-24-MAY-26.CON.P02.B01.SUB.2ndB,The Big - P.01 - UP-24-MAY-26,10,10,19-Jan-26,31-Jan-26,6-Jun-26,16-Jun-26,0,-108,0,0,0,0,"E-APP-B01-BAS02-1040, E-APP-B01-BAS02-1030, CON-B01-BAS02-1030","CON-B01-BAS02-1070, CON-B01-BAS02-1050, CON-B01-BAS02-1070",0,0%,Yes,Yes
43,CON-B04-FOOT-1060,Shuttering for Columns & Walls Below SOG (B01) (footing),The Big - P.01 - UP-24-MAY-26.CON.P01.B04.SUB.1,The Big - P.01 - UP-24-MAY-26,5,2,20-Jan-26,26-Jan-26,10-Mar-26 A,6-May-26,0,-80,0,0,0,0,"CON-B04-FOOT-1040, E-APP-B04-FOOT-1020","CON-B04-FOOT-1070, CON-B04-FOOT-1070",0,65%,Yes,No
43,CON-B04-FOOT-1070,RFT for Columns & Walls Below SOG (B04) (footing),The Big - P.01 - UP-24-MAY-26.CON.P01.B04.SUB.1,The Big - P.01 - UP-24-MAY-26,5,2,21-Jan-26,27-Jan-26,10-Mar-26 A,6-May-26,0,-80,0,0,0,0,"CON-B04-FOOT-1060, CON-B04-FOOT-1060, E-APP-B04-FOOT-1030, P-MDEL-1000",CON-B04-FOOT-1090,0,65%,Yes,No
0,CON-B01-BAS02-1070,RFT for Slabs & Beams (B01) (Bas 02),The Big - P.01 - UP-24-MAY-26.CON.P02.B01.SUB.2ndB,The Big - P.01 - UP-24-MAY-26,10,10,22-Jan-26,3-Feb-26,9-Jun-26,20-Jun-26,0,-108,0,0,0,0,"CON-B01-BAS02-1040, CON-B01-BAS02-1040, E-APP-B01-BAS02-1030, E-APP-B01-BAS02-1040, P-MDEL-1170",CON-B01-BAS02-1130,0,0%,Yes,Yes
5,CON-B03-BAS02-1000,"Scaffolding works for Walls, Col. & Cores (B03) (Bas 02)",The Big - P.01 - UP-24-MAY-26.CON.P01.B03.SUB.2ndB,The Big - P.01 - UP-24-MAY-26,6,0,22-Jan-26,29-Jan-26,15-Feb-26 A,21-Feb-26 A,,,0,0,0,0,"CON-B02-BAS02-1000, CON-B03-FOOT-1100","CON-B03-BAS02-1010, CON-B03-BAS02-1010",0,100%,No,No
5,CON-B03-BAS02-1010,"RFT for Walls, Col. & Cores (B03) (Bas 02)",The Big - P.01 - UP-24-MAY-26.CON.P01.B03.SUB.2ndB,The Big - P.01 - UP-24-MAY-26,12,0,22-Jan-26,5-Feb-26,05-Mar-26 A,11-Mar-26 A,,,0,0,1,0,"CON-B03-BAS02-1000, CON-B03-BAS02-1000, CON-B02-BAS02-1010, E-APP-B03-BAS02-1000, P-MDEL-1170","CON-B03-BAS02-1020, CON-B03-BAS02-1020",1,100%,No,No
2,CON-B02-BAS02-1030,"Pouring for Walls, Col. & Cores (B02) (Bas 02)",The Big - P.01 - UP-24-MAY-26.CON.P02.B02.SUB.2ndB,The Big - P.01 - UP-24-MAY-26,2,0,24-Jan-26,26-Jan-26,09-May-26 A,10-May-26 A,,,0,0,0,0,"CON-B02-BAS02-1020, P-MDEL-1030","CON-B03-BAS02-1030, CON-B02-BAS02-1040, AB-SUB-B02-BAS2-1000",0,100%,No,No
0,CON-B02-BAS02-1040,Shuttering for Slabs & Beams (B02) (Bas 02),The Big - P.01 - UP-24-MAY-26.CON.P02.B02.SUB.2ndB,The Big - P.01 - UP-24-MAY-26,8,6,27-Jan-26,4-Feb-26,05-May-26 A,12-May-26,0,-79,0,0,0,0,"E-APP-B02-BAS02-1030, E-APP-B02-BAS02-1020, CON-B02-BAS02-1030","CON-B02-BAS02-1050, CON-B02-BAS02-1060, CON-B03-BAS02-1040, CON-B02-BAS02-1060",0,20%,Yes,No
4,CON-B03-BAS02-1020,"Shuttering for Walls, Col. & Cores (B03) (Bas 02)",The Big - P.01 - UP-24-MAY-26.CON.P01.B03.SUB.2ndB,The Big - P.01 - UP-24-MAY-26,12,0,27-Jan-26,9-Feb-26,07-Mar-26 A,11-Mar-26 A,,,0,0,0,0,"CON-B03-BAS02-1010, CON-B02-BAS02-1020, CON-B03-BAS02-1010, E-APP-B03-BAS02-1000",CON-B03-BAS02-1030,0,100%,No,No
0,CON-B04-FOOT-1090,Pouring Columns & Walls Below SOG (B01) (footing),The Big - P.01 - UP-24-MAY-26.CON.P01.B04.SUB.1,The Big - P.01 - UP-24-MAY-26,1,1,28-Jan-26,28-Jan-26,6-May-26,7-May-26,0,-80,0,0,0,0,CON-B04-FOOT-1070,CON-B04-FOOT-1100,0,0%,Yes,No
0,CON-B04-FOOT-1100,Curing & Deshuttering for RC Raft & Footings (B04) (footing),The Big - P.01 - UP-24-MAY-26.CON.P01.B04.SUB.1,The Big - P.01 - UP-24-MAY-26,3,3,29-Jan-26,31-Jan-26,7-May-26,10-May-26,0,-99,0,0,0,0,"CON-B04-FOOT-1080, CON-B04-FOOT-1090","CON-B04-FOOT-1110, CON-B04-BAS02-1000",0,0%,Yes,No
0,CON-B02-BAS02-1050,Shuttering for Stairs (B02) (Bas 02),The Big - P.01 - UP-24-MAY-26.CON.P02.B02.SUB.2ndB,The Big - P.01 - UP-24-MAY-26,6,6,29-Jan-26,4-Feb-26,7-May-26,13-May-26,0,-79,0,0,0,0,"CON-B02-BAS02-1040, E-APP-B02-BAS02-1010","CON-B02-BAS02-1070, CON-B03-BAS02-1050, CON-B02-BAS02-1070",0,0%,Yes,No
0,CON-B02-BAS02-1070,RFT for Stairs  (B02) (Bas 02),The Big - P.01 - UP-24-MAY-26.CON.P02.B02.SUB.2ndB,The Big - P.01 - UP-24-MAY-26,6,6,1-Feb-26,7-Feb-26,10-May-26,16-May-26,0,-79,0,0,0,0,"CON-B02-BAS02-1050, CON-B02-BAS02-1050, E-APP-B02-BAS02-1010, P-MDEL-1170","CON-B03-BAS02-1070, CON-B02-BAS02-1080, AB-SUB-B02-BAS2-1010",0,0%,Yes,No
0,CON-B04-BAS02-1000,"Scaffolding works for Walls, Col. & Cores (B04) (Bas 02)",The Big - P.01 - UP-24-MAY-26.CON.P01.B04.SUB.3,The Big - P.01 - UP-24-MAY-26,7,7,1-Feb-26,8-Feb-26,10-May-26,18-May-26,0,-80,0,0,0,0,CON-B04-FOOT-1100,"CON-B04-BAS02-1010, CON-B04-BAS02-1010",0,0%,Yes,No
0,CON-B04-BAS02-1010,"RFT for Walls, Col. & Cores (B04) (Bas 02)",The Big - P.01 - UP-24-MAY-26.CON.P01.B04.SUB.3,The Big - P.01 - UP-24-MAY-26,10,10,1-Feb-26,11-Feb-26,10-May-26,21-May-26,0,-80,0,0,0,1,"CON-B04-BAS02-1000, CON-B04-BAS02-1000, E-APP-B04-BAS02-1000, P-MDEL-1170","CON-B04-BAS02-1020, AB-SUB-B04-BAS2-1000, CON-B04-BAS02-1020",1,0%,Yes,No
0,CON-B01-BAS02-1130,Pouring for Slabs & Beams (B01) (Bas 02),The Big - P.01 - UP-24-MAY-26.CON.P02.B01.SUB.2ndB,The Big - P.01 - UP-24-MAY-26,2,2,4-Feb-26,5-Feb-26,21-Jun-26,22-Jun-26,0,-108,0,0,0,0,"CON-B01-BAS02-1070, P-MDEL-1030","CON-B01-BAS02-1140, AB-SUB-B01-BAS2-1040, AB-SUB-B01-BAS2-1030, CON-B01-BAS02-1120",0,0%,Yes,Yes
0,CON-B01-BAS02-1120,"Curing for Slabs, Beams, Ramps & Stairs (B01) (Bas 02)",The Big - P.01 - UP-24-MAY-26.CON.P02.B01.SUB.2ndB,The Big - P.01 - UP-24-MAY-26,3,3,6-Feb-26,8-Feb-26,23-Jun-26,25-Jun-26,1,-137,0,0,0,0,CON-B01-BAS02-1130,CON-B01-BAS01-1000,0,0%,Yes,Yes
0,CON-B02-BAS02-1080,Pouring for Stairs  (B02) (Bas 02),The Big - P.01 - UP-24-MAY-26.CON.P02.B02.SUB.2ndB,The Big - P.01 - UP-24-MAY-26,2,2,8-Feb-26,9-Feb-26,17-May-26,18-May-26,0,-79,0,0,0,0,"CON-B02-BAS02-1070, P-MDEL-1030","CON-B03-BAS02-1080, CON-B02-BAS02-1090",0,0%,Yes,No
0,CON-B04-BAS02-1020,"Shuttering for Walls, Col. & Cores (B04) (Bas 02)",The Big - P.01 - UP-24-MAY-26.CON.P01.B04.SUB.3,The Big - P.01 - UP-24-MAY-26,10,10,8-Feb-26,18-Feb-26,17-May-26,2-Jun-26,0,-80,0,0,0,0,"CON-B04-BAS02-1010, CON-B04-BAS02-1010, E-APP-B04-BAS02-1000",CON-B04-BAS02-1030,0,0%,Yes,No
0,CON-B01-BAS01-1000,"Scaffolding works for Walls, Col. & Cores (B01) (Bas 01)",The Big - P.01 - UP-24-MAY-26.CON.P02.B01.SUB.1stB,The Big - P.01 - UP-24-MAY-26,7,7,9-Feb-26,16-Feb-26,27-Jun-26,5-Jul-26,0,-109,0,0,0,0,"CON-B01-BAS02-1120, 123456","CON-B01-BAS01-1010, CON-B01-BAS01-1010",0,0%,Yes,Yes
0,CON-B01-BAS01-1010,"RFT for Walls, Col. & Cores (B01) (Bas 01)",The Big - P.01 - UP-24-MAY-26.CON.P02.B01.SUB.1stB,The Big - P.01 - UP-24-MAY-26,12,12,9-Feb-26,22-Feb-26,27-Jun-26,11-Jul-26,0,-109,0,0,0,1,"CON-B01-BAS01-1000, CON-B01-BAS01-1000, E-APP-B01-BAS01-1000, P-MDEL-1160","CON-B01-BAS01-1020, CON-B01-BAS01-1030, CON-B01-BAS01-1020",1,0%,Yes,Yes
0,CON-B02-BAS02-1090,"Curing for Slabs, Beams & Stairs (B02) (Bas 02)",The Big - P.01 - UP-24-MAY-26.CON.P02.B02.SUB.2ndB,The Big - P.01 - UP-24-MAY-26,5,5,10-Feb-26,14-Feb-26,19-May-26,23-May-26,0,-98,0,0,0,0,CON-B02-BAS02-1080,"CON-B03-BAS02-1090, CON-B02-BAS02-1110, CON-B02-BAS01-1000",0,0%,Yes,No
0,CON-B03-BAS02-1030,"Pouring for Walls, Col. & Cores (B03) (Bas 02)",The Big - P.01 - UP-24-MAY-26.CON.P01.B03.SUB.2ndB,The Big - P.01 - UP-24-MAY-26,2,0,10-Feb-26,11-Feb-26,17-Mar-26 A,17-Mar-26 A,,,0,0,0,0,"CON-B02-BAS02-1030, CON-B03-BAS02-1020, P-MDEL-1030","CON-B03-BAS02-1040, AB-SUB-B03-BAS2-1000",0,100%,No,No
10,CON-B03-BAS02-1040,Shuttering for Slabs & Beams (B03) (Bas 02),The Big - P.01 - UP-24-MAY-26.CON.P01.B03.SUB.2ndB,The Big - P.01 - UP-24-MAY-26,8,0,12-Feb-26,21-Feb-26,13-May-26 A,25-May-26 A,,,0,0,0,0,"CON-B02-BAS02-1040, E-APP-B03-BAS02-1030, E-APP-B03-BAS02-1020, CON-B03-BAS02-1030","CON-B03-BAS02-1050, CON-B03-BAS02-1060, CON-B03-BAS02-1060",0,100%,No,No
0,CON-B01-BAS01-1020,"Shuttering for Walls, Col. & Cores (B01) (Bas 01)",The Big - P.01 - UP-24-MAY-26.CON.P02.B01.SUB.1stB,The Big - P.01 - UP-24-MAY-26,12,12,12-Feb-26,25-Feb-26,1-Jul-26,14-Jul-26,0,-109,0,0,0,0,"CON-B01-BAS01-1010, CON-B01-BAS01-1010, E-APP-B01-BAS01-1000",CON-B01-BAS01-1030,0,0%,Yes,Yes
10,CON-B03-BAS02-1060,RFT for Slabs & Beams (B03) (Bas 02),The Big - P.01 - UP-24-MAY-26.CON.P01.B03.SUB.2ndB,The Big - P.01 - UP-24-MAY-26,10,0,15-Feb-26,25-Feb-26,13-May-26 A,25-May-26 A,,,0,0,0,0,"CON-B03-BAS02-1040, CON-B02-BAS02-1060, CON-B03-BAS02-1040, E-APP-B03-BAS02-1020, E-APP-B03-BAS02-1030, P-MDEL-1170",CON-B03-BAS02-1100,0,100%,No,No
0,CON-B02-BAS01-1000,"Scaffolding works for Walls, Col. & Cores (B02) (Bas 01)",The Big - P.01 - UP-24-MAY-26.CON.P02.B02.SUB.1stB,The Big - P.01 - UP-24-MAY-26,7,7,15-Feb-26,22-Feb-26,24-May-26,4-Jun-26,0,-79,0,0,0,0,CON-B02-BAS02-1090,"CON-B02-BAS01-1010, CON-B03-BAS01-1000, CON-B02-BAS01-1010",0,0%,Yes,No
0,CON-B02-BAS01-1010,"RFT for Walls, Col. & Cores (B02) (Bas 01)",The Big - P.01 - UP-24-MAY-26.CON.P02.B02.SUB.1stB,The Big - P.01 - UP-24-MAY-26,12,12,15-Feb-26,28-Feb-26,24-May-26,10-Jun-26,0,-79,0,0,0,1,"CON-B02-BAS01-1000, CON-B02-BAS01-1000, E-APP-B02-BAS01-1000, P-MDEL-1160","CON-B02-BAS01-1020, CON-B03-BAS01-1010, CON-B02-BAS01-1020",1,0%,Yes,No
44,CON-B03-BAS02-1070,RFT for Stairs  (B03) (Bas 02),The Big - P.01 - UP-24-MAY-26.CON.P01.B03.SUB.2ndB,The Big - P.01 - UP-24-MAY-26,6,0,17-Feb-26,23-Feb-26,31-Mar-26 A,23-May-26 A,,,0,0,0,0,"CON-B03-BAS02-1050, CON-B02-BAS02-1070, CON-B03-BAS02-1050, E-APP-B03-BAS02-1010, P-MDEL-1170",CON-B03-BAS02-1080,0,100%,No,No
0,CON-B02-BAS01-1020,"Shuttering for Walls, Col. & Cores (B02) (Bas 01)",The Big - P.01 - UP-24-MAY-26.CON.P02.B02.SUB.1stB,The Big - P.01 - UP-24-MAY-26,12,12,17-Feb-26,2-Mar-26,26-May-26,13-Jun-26,0,-79,0,0,0,0,"CON-B02-BAS01-1010, CON-B02-BAS01-1010, E-APP-B02-BAS01-1000","CON-B02-BAS01-1030, CON-B03-BAS01-1020",0,0%,Yes,No
0,CON-B04-BAS02-1030,"Pouring for Walls, Col. & Cores (B04) (Bas 02)",The Big - P.01 - UP-24-MAY-26.CON.P01.B04.SUB.3,The Big - P.01 - UP-24-MAY-26,2,2,19-Feb-26,21-Feb-26,2-Jun-26,4-Jun-26,0,-80,0,0,0,0,"CON-B04-BAS02-1020, P-MDEL-1030","CON-B04-BAS02-1040, CON-B04-BAS02-1070, CON-B04-BAS02-1050",0,0%,Yes,No
0,CON-B04-BAS02-1040,Shuttering for Slabs & Beams (B04) (Bas 02),The Big - P.01 - UP-24-MAY-26.CON.P01.B04.SUB.3,The Big - P.01 - UP-24-MAY-26,8,8,22-Feb-26,2-Mar-26,4-Jun-26,14-Jun-26,0,-80,0,0,0,0,"E-APP-B04-BAS02-1040, E-APP-B04-BAS02-1030, CON-B04-BAS02-1030","CON-B04-BAS02-1060, CON-B04-BAS02-1060",0,0%,Yes,No
0,CON-B04-BAS02-1060,RFT for Slabs & Beams (B04) (Bas 02),The Big - P.01 - UP-24-MAY-26.CON.P01.B04.SUB.3,The Big - P.01 - UP-24-MAY-26,10,10,24-Feb-26,7-Mar-26,7-Jun-26,18-Jun-26,0,-80,0,0,0,0,"CON-B04-BAS02-1040, CON-B04-BAS02-1040, E-APP-B04-BAS02-1030, E-APP-B04-BAS02-1040, P-MDEL-1170",CON-B04-BAS02-1130,0,0%,Yes,No
0,CON-B03-BAS02-1100,Pouring for Slabs & Beams B03) (Bas 02),The Big - P.01 - UP-24-MAY-26.CON.P01.B03.SUB.2ndB,The Big - P.01 - UP-24-MAY-26,2,2,26-Feb-26,28-Feb-26,4-Jun-26,6-Jun-26,0,-75,0,0,0,0,"CON-B02-BAS02-1100, CON-B03-BAS02-1060, P-MDEL-1030","CON-B03-BAS01-1000, AB-SUB-B03-BAS2-1020, AB-SUB-B03-BAS2-1030",0,0%,Yes,No
0,CON-B01-BAS01-1030,"Pouring for Walls, Col. & Cores (B01) (Bas 01)",The Big - P.01 - UP-24-MAY-26.CON.P02.B01.SUB.1stB,The Big - P.01 - UP-24-MAY-26,2,2,26-Feb-26,28-Feb-26,15-Jul-26,16-Jul-26,0,-109,0,0,0,0,"CON-B01-BAS01-1020, CON-B01-BAS01-1010, P-MDEL-1030","CON-B01-BAS01-1040, AB-SUB-B01-BAS1-1000",0,0%,Yes,Yes
0,CON-B01-BAS01-1040,Shuttering for Slabs & Beams (B01) (Bas 01),The Big - P.01 - UP-24-MAY-26.CON.P02.B01.SUB.1stB,The Big - P.01 - UP-24-MAY-26,8,8,1-Mar-26,9-Mar-26,18-Jul-26,27-Jul-26,0,-109,0,0,0,0,"E-APP-B01-BAS01-1040, E-APP-B01-BAS01-1030, CON-B01-BAS01-1030","CON-B01-BAS01-1050, CON-B01-BAS01-1060, CON-B01-BAS01-1060",0,0%,Yes,Yes
0,CON-B03-BAS01-1000,"Scaffolding works for Walls, Col. & Cores (B03) (Bas 01)",The Big - P.01 - UP-24-MAY-26.CON.P01.B03.SUB.1stB,The Big - P.01 - UP-24-MAY-26,6,6,1-Mar-26,7-Mar-26,7-Jun-26,13-Jun-26,4,-75,0,0,0,0,"CON-B02-BAS01-1000, CON-B03-BAS02-1100","CON-B03-BAS01-1010, CON-B03-BAS01-1010",0,0%,Yes,No
0,CON-B03-BAS01-1010,"RFT for Walls, Col. & Cores (B03) (Bas 01)",The Big - P.01 - UP-24-MAY-26.CON.P01.B03.SUB.1stB,The Big - P.01 - UP-24-MAY-26,12,12,1-Mar-26,14-Mar-26,11-Jun-26,24-Jun-26,0,-79,0,0,0,0,"CON-B03-BAS01-1000, CON-B02-BAS01-1010, CON-B03-BAS01-1000, E-APP-B03-BAS01-1000, P-MDEL-1160","CON-B03-BAS01-1020, CON-B03-BAS01-1020",0,0%,Yes,No
0,CON-B01-BAS01-1060,RFT for Slabs & Beams (B01) (Bas 01),The Big - P.01 - UP-24-MAY-26.CON.P02.B01.SUB.1stB,The Big - P.01 - UP-24-MAY-26,10,10,3-Mar-26,14-Mar-26,20-Jul-26,1-Aug-26,0,-109,0,0,0,0,"CON-B01-BAS01-1040, CON-B01-BAS01-1040, CON-B01-BAS02-1140, E-APP-B01-BAS01-1030, E-APP-B01-BAS01-1040, P-MDEL-1160",CON-B01-BAS01-1110,0,0%,Yes,Yes
0,CON-B02-BAS01-1030,"Pouring for Walls, Col. & Cores (B02) (Bas 01)",The Big - P.01 - UP-24-MAY-26.CON.P02.B02.SUB.1stB,The Big - P.01 - UP-24-MAY-26,2,2,3-Mar-26,4-Mar-26,14-Jun-26,15-Jun-26,0,-79,0,0,0,0,"CON-B02-BAS01-1020, P-MDEL-1030","CON-B03-BAS01-1030, CON-B02-BAS01-1040, AB-SUB-B02-BAS1-1000",0,0%,Yes,No
0,CON-B03-BAS01-1020,"Shuttering for Walls, Col. & Cores (B03) (Bas 01)",The Big - P.01 - UP-24-MAY-26.CON.P01.B03.SUB.1stB,The Big - P.01 - UP-24-MAY-26,12,12,4-Mar-26,22-Mar-26,15-Jun-26,28-Jun-26,0,-79,0,0,0,0,"CON-B03-BAS01-1010, CON-B02-BAS01-1020, CON-B03-BAS01-1010, E-APP-B03-BAS01-1000",CON-B03-BAS01-1030,0,0%,Yes,No
0,CON-B02-BAS01-1040,Shuttering for Slabs & Beams (B02) (Bas 01),The Big - P.01 - UP-24-MAY-26.CON.P02.B02.SUB.1stB,The Big - P.01 - UP-24-MAY-26,8,8,5-Mar-26,14-Mar-26,16-Jun-26,24-Jun-26,0,-79,0,0,0,0,"E-APP-B02-BAS01-1030, E-APP-B02-BAS01-1020, CON-B02-BAS01-1030, CON-B02-BAS02-1110","CON-B02-BAS01-1050, CON-B02-BAS01-1060, CON-B03-BAS01-1040, CON-B02-BAS01-1060",0,0%,Yes,No
0,CON-B02-BAS01-1060,RFT for Slabs & Beams (B02) (Bas 01),The Big - P.01 - UP-24-MAY-26.CON.P02.B02.SUB.1stB,The Big - P.01 - UP-24-MAY-26,10,10,8-Mar-26,23-Mar-26,18-Jun-26,29-Jun-26,0,-79,0,0,0,0,"CON-B02-BAS01-1040, CON-B02-BAS01-1040, E-APP-B02-BAS01-1020, E-APP-B02-BAS01-1030, P-MDEL-1160","CON-B03-BAS01-1050, CON-B02-BAS01-1090",0,0%,Yes,No
0,CON-B04-BAS02-1130,Pouring for Slabs & Beams (B04) (Bas 02),The Big - P.01 - UP-24-MAY-26.CON.P01.B04.SUB.3,The Big - P.01 - UP-24-MAY-26,2,2,8-Mar-26,9-Mar-26,18-Jun-26,21-Jun-26,0,-80,0,0,0,0,"CON-B04-BAS02-1060, P-MDEL-1030, CON-B04-WT-1210","CON-B04-BAS02-1140, AB-SUB-B04-BAS2-1030, AB-SUB-B04-BAS2-1040, CON-B04-BAS01-1000, CON-B04-BAS02-1120",0,0%,Yes,No
0,CON-B04-BAS01-1000,"Scaffolding works for Walls, Col. & Cores (B04) (Bas 01)",The Big - P.01 - UP-24-MAY-26.CON.P01.B04.SUB.2,The Big - P.01 - UP-24-MAY-26,7,7,10-Mar-26,22-Mar-26,21-Jun-26,29-Jun-26,0,-80,0,0,0,0,CON-B04-BAS02-1130,"CON-B04-BAS01-1010, CON-B04-BAS01-1010",0,0%,Yes,No
0,CON-B04-BAS01-1010,"RFT for Walls, Col. & Cores (B04) (Bas 01)",The Big - P.01 - UP-24-MAY-26.CON.P01.B04.SUB.2,The Big - P.01 - UP-24-MAY-26,8,8,10-Mar-26,23-Mar-26,21-Jun-26,1-Jul-26,0,-80,0,0,0,12,"CON-B04-BAS01-1000, CON-B04-BAS01-1000, E-APP-B04-BAS01-1000, P-MDEL-1160","CON-B04-BAS01-1020, CON-B04-BAS01-1020",12,0%,Yes,No
0,CON-B01-BAS01-1110,Pouring for Slabs & Beams (B01) (Bas 01),The Big - P.01 - UP-24-MAY-26.CON.P02.B01.SUB.1stB,The Big - P.01 - UP-24-MAY-26,2,2,15-Mar-26,21-Mar-26,2-Aug-26,3-Aug-26,0,-109,0,0,0,0,"CON-B01-BAS01-1060, P-MDEL-1030","CON-B01-BAS01-1140, AB-SUB-B01-BAS1-1030, AB-SUB-B01-BAS1-1020, CON-B01-GR-1000",0,0%,Yes,Yes
0,CON-B04-BAS01-1020,"Shuttering for Walls, Col. & Cores (B04) (Bas 01)",The Big - P.01 - UP-24-MAY-26.CON.P01.B04.SUB.2,The Big - P.01 - UP-24-MAY-26,6,6,15-Mar-26,25-Mar-26,25-Jun-26,4-Jul-26,0,-80,0,0,0,0,"CON-B04-BAS01-1010, CON-B04-BAS01-1010, E-APP-B04-BAS01-1000",CON-B04-BAS01-1030,0,0%,Yes,No
0,CON-B01-GR-1000,"Scaffolding works for Walls, Col. & Cores (B01) (GR)",The Big - P.01 - UP-24-MAY-26.CON.P02.B01.SUP.GF,The Big - P.01 - UP-24-MAY-26,7,7,22-Mar-26,29-Mar-26,4-Aug-26,11-Aug-26,0,-109,0,0,0,0,CON-B01-BAS01-1110,"CON-B01-GR-1010, CON-B01-GR-1010",0,0%,Yes,Yes
0,CON-B01-GR-1010,"RFT for Walls, Col. & Cores (B01) (GR)",The Big - P.01 - UP-24-MAY-26.CON.P02.B01.SUP.GF,The Big - P.01 - UP-24-MAY-26,10,10,22-Mar-26,1-Apr-26,4-Aug-26,15-Aug-26,0,-109,0,0,0,1,"CON-B01-GR-1000, CON-B01-GR-1000, E-APP-B01-GR-1000, P-MDEL-1130","CON-B01-GR-1020, CON-B01-GR-1020",1,0%,Yes,Yes
0,CON-B03-BAS01-1030,"Pouring for Walls, Col. & Cores (B03) (Bas 01)",The Big - P.01 - UP-24-MAY-26.CON.P01.B03.SUB.1stB,The Big - P.01 - UP-24-MAY-26,2,2,23-Mar-26,24-Mar-26,29-Jun-26,1-Jul-26,0,-79,0,0,0,0,"CON-B03-BAS01-1020, CON-B02-BAS01-1030, P-MDEL-1030","CON-B03-BAS01-1040, AB-SUB-B03-BAS1-1000",0,0%,Yes,No
0,CON-B02-BAS01-1090,Pouring for Slabs & Beams (B02) (Bas 01),The Big - P.01 - UP-24-MAY-26.CON.P02.B02.SUB.1stB,The Big - P.01 - UP-24-MAY-26,2,2,24-Mar-26,25-Mar-26,1-Jul-26,2-Jul-26,0,-79,0,0,0,0,"CON-B02-BAS01-1060, P-MDEL-1030","CON-B02-BAS01-1110, AB-SUB-B02-BAS1-1020, AB-SUB-B02-BAS1-1030, CON-B02-GR-1000",0,0%,Yes,No
0,CON-B01-GR-1020,"Shuttering for Walls, Col. & Cores (B01) (GR)",The Big - P.01 - UP-24-MAY-26.CON.P02.B01.SUP.GF,The Big - P.01 - UP-24-MAY-26,10,10,24-Mar-26,4-Apr-26,6-Aug-26,17-Aug-26,0,-109,0,0,0,0,"CON-B01-GR-1010, CON-B01-GR-1010, E-APP-B01-GR-1000",CON-B01-GR-1030,0,0%,Yes,Yes
0,CON-B03-BAS01-1040,Shuttering for Slabs & Beams (B03) (Bas 01),The Big - P.01 - UP-24-MAY-26.CON.P01.B03.SUB.1stB,The Big - P.01 - UP-24-MAY-26,8,8,25-Mar-26,2-Apr-26,2-Jul-26,11-Jul-26,0,-79,0,0,0,0,"CON-B02-BAS01-1040, E-APP-B03-BAS01-1030, E-APP-B03-BAS01-1020, CON-B03-BAS01-1030, CON-B03-BAS02-1110","CON-B03-BAS01-1060, CON-B03-BAS01-1050, CON-B03-BAS01-1050",0,0%,Yes,No
0,CON-B04-BAS01-1030,"Pouring for Walls, Col. & Cores (B04) (Bas 01)",The Big - P.01 - UP-24-MAY-26.CON.P01.B04.SUB.2,The Big - P.01 - UP-24-MAY-26,2,2,26-Mar-26,28-Mar-26,4-Jul-26,6-Jul-26,0,-80,0,0,0,0,"CON-B04-BAS01-1020, P-MDEL-1030","CON-B04-BAS01-1040, CON-B04-BAS01-1050, AB-SUB-B04-BAS1-1000",0,0%,Yes,No
0,CON-B04-BAS01-1040,Shuttering for Slabs & Beams (B04) (Bas 01),The Big - P.01 - UP-24-MAY-26.CON.P01.B04.SUB.2,The Big - P.01 - UP-24-MAY-26,8,8,29-Mar-26,6-Apr-26,6-Jul-26,15-Jul-26,0,-80,0,0,0,0,"E-APP-B04-BAS01-1040, E-APP-B04-BAS01-1030, CON-B04-BAS01-1030, CON-B04-BAS02-1140","CON-B04-BAS01-1060, CON-B04-BAS01-1070, CON-B04-BAS01-1070",0,0%,Yes,No
0,CON-B03-BAS01-1060,Shuttering for Stairs (B03) (Bas 01),The Big - P.01 - UP-24-MAY-26.CON.P01.B03.SUB.1stB,The Big - P.01 - UP-24-MAY-26,8,8,29-Mar-26,6-Apr-26,6-Jul-26,14-Jul-26,0,-79,0,0,0,0,"CON-B03-BAS01-1040, CON-B02-BAS01-1050, E-APP-B03-BAS01-1010","CON-B03-BAS01-1070, CON-B03-BAS01-1070",0,0%,Yes,No
0,CON-B04-BAS01-1050,Shuttering for Ramps (B04) (Bas 01),The Big - P.01 - UP-24-MAY-26.CON.P01.B04.SUB.2,The Big - P.01 - UP-24-MAY-26,7,7,29-Mar-26,5-Apr-26,6-Jul-26,14-Jul-26,0,-80,0,0,0,0,"CON-B04-BAS01-1030, E-APP-B04-BAS01-1020","CON-B04-BAS01-1080, CON-B04-BAS01-1080",0,0%,Yes,No
0,CON-B04-BAS01-1060,Shuttering for Stairs  (B04) (Bas 01),The Big - P.01 - UP-24-MAY-26.CON.P01.B04.SUB.2,The Big - P.01 - UP-24-MAY-26,6,6,31-Mar-26,6-Apr-26,8-Jul-26,15-Jul-26,0,-80,0,0,0,0,"CON-B04-BAS01-1040, E-APP-B04-BAS01-1010","CON-B04-BAS01-1090, CON-B04-BAS01-1090",0,0%,Yes,No
0,CON-B03-BAS01-1070,RFT for Stairs (B03) (Bas 01),The Big - P.01 - UP-24-MAY-26.CON.P01.B03.SUB.1stB,The Big - P.01 - UP-24-MAY-26,6,6,31-Mar-26,6-Apr-26,8-Jul-26,14-Jul-26,0,-79,0,0,0,0,"CON-B03-BAS01-1060, CON-B02-BAS01-1070, CON-B03-BAS01-1060, E-APP-B03-BAS01-1010, P-MDEL-1160",CON-B03-BAS01-1080,0,0%,Yes,No
0,CON-B04-BAS01-1070,RFT for Slabs & Beams (B04) (Bas 01),The Big - P.01 - UP-24-MAY-26.CON.P01.B04.SUB.2,The Big - P.01 - UP-24-MAY-26,8,8,2-Apr-26,11-Apr-26,11-Jul-26,20-Jul-26,0,-80,0,0,0,0,"CON-B04-BAS01-1040, CON-B04-BAS01-1040, E-APP-B04-BAS01-1030, E-APP-B04-BAS01-1040, P-MDEL-1160",CON-B04-BAS01-1120,0,0%,Yes,No
0,CON-B04-BAS01-1080,RFT for  Ramps (B04) (Bas 01),The Big - P.01 - UP-24-MAY-26.CON.P01.B04.SUB.2,The Big - P.01 - UP-24-MAY-26,7,7,4-Apr-26,11-Apr-26,12-Jul-26,20-Jul-26,0,-80,0,0,0,0,"CON-B04-BAS01-1050, CON-B04-BAS01-1050, E-APP-B04-BAS01-1020, P-MDEL-1160",CON-B04-BAS01-1110,0,0%,Yes,No
0,CON-B01-GR-1030,"Pouring for Walls, Col. & Cores (B01) (GR)",The Big - P.01 - UP-24-MAY-26.CON.P02.B01.SUP.GF,The Big - P.01 - UP-24-MAY-26,2,2,5-Apr-26,6-Apr-26,18-Aug-26,19-Aug-26,0,-109,0,0,0,0,"CON-B01-GR-1020, P-MDEL-1030","AB-SUB-B01-GR-1000, CON-B01-GR-1040, CON-B01-GR-1050",0,0%,Yes,Yes
0,CON-B04-BAS01-1090,RFT for Stairs  (B04) (Bas 01),The Big - P.01 - UP-24-MAY-26.CON.P01.B04.SUB.2,The Big - P.01 - UP-24-MAY-26,5,5,6-Apr-26,11-Apr-26,14-Jul-26,20-Jul-26,0,-80,0,0,0,0,"CON-B04-BAS01-1060, CON-B04-BAS01-1060, E-APP-B04-BAS01-1010, P-MDEL-1160",CON-B04-BAS01-1100,0,0%,Yes,No
0,CON-B01-BAS01-1140,Dismantling Formwork (B01) (Bas 01),The Big - P.01 - UP-24-MAY-26.CON.P02.B01.SUB.1stB,The Big - P.01 - UP-24-MAY-26,1,1,7-Apr-26,7-Apr-26,20-Aug-26,20-Aug-26,0,-135,0,0,0,0,"CON-B01-BAS01-1110, CON-B01-BAS01-1120, CON-B01-BAS01-1130, CON-B01-BAS01-1150",CON-B01-GR-1040,0,0%,Yes,Yes
0,CON-B03-BAS01-1080,Pouring for Stairs (B03) (Bas 01),The Big - P.01 - UP-24-MAY-26.CON.P01.B03.SUB.1stB,The Big - P.01 - UP-24-MAY-26,2,2,7-Apr-26,8-Apr-26,15-Jul-26,16-Jul-26,0,-79,0,0,0,0,"CON-B02-BAS01-1080, CON-B03-BAS01-1070, P-MDEL-1030","CON-B03-BAS01-1100, CON-B03-BAS01-1110, AB-SUB-B03-BAS1-1010",0,0%,Yes,No
0,CON-B03-BAS01-1100,"Curing for Slabs, Beams & Stairs (B03) (Bas 01)",The Big - P.01 - UP-24-MAY-26.CON.P01.B03.SUB.1stB,The Big - P.01 - UP-24-MAY-26,5,5,9-Apr-26,13-Apr-26,17-Jul-26,21-Jul-26,0,-99,0,0,0,0,"CON-B03-BAS01-1080, CON-B02-BAS01-1100",CON-B03-GR-1000,0,0%,Yes,No
0,CON-B01-GR-1050,Shuttering for Stairs  (B01) (GR),The Big - P.01 - UP-24-MAY-26.CON.P02.B01.SUP.GF,The Big - P.01 - UP-24-MAY-26,8,8,9-Apr-26,19-Apr-26,23-Aug-26,1-Sep-26,0,-109,0,0,0,0,"E-APP-B01-GR-1010, CON-B01-GR-1030","CON-B01-GR-1070, CON-B01-GR-1070",0,0%,Yes,Yes
0,CON-B02-BAS01-1110,Dismantling Formwork (B02) (Bas 01),The Big - P.01 - UP-24-MAY-26.CON.P02.B02.SUB.1stB,The Big - P.01 - UP-24-MAY-26,1,1,12-Apr-26,12-Apr-26,20-Jul-26,20-Jul-26,1,-99,0,0,0,0,"CON-B02-BAS01-1090, CON-B02-BAS01-1100",CON-B02-GR-1040,0,0%,Yes,No
0,CON-B04-BAS01-1120,Pouring for Slabs & Beams (B04) (Bas 01),The Big - P.01 - UP-24-MAY-26.CON.P01.B04.SUB.2,The Big - P.01 - UP-24-MAY-26,2,2,12-Apr-26,14-Apr-26,20-Jul-26,22-Jul-26,0,-80,0,0,0,0,"CON-B04-BAS01-1070, P-MDEL-1030","CON-B04-BAS01-1140, AB-SUB-B04-BAS1-1030, AB-SUB-B04-BAS1-1040, CON-B04-GR-1000, CON-B04-BAS01-1130",0,0%,Yes,No
0,CON-B04-BAS01-1100,Pouring for Stairs  (B04) (Bas 01),The Big - P.01 - UP-24-MAY-26.CON.P01.B04.SUB.2,The Big - P.01 - UP-24-MAY-26,2,2,12-Apr-26,14-Apr-26,20-Jul-26,22-Jul-26,0,-80,0,0,0,0,"CON-B04-BAS01-1090, P-MDEL-1030","CON-B04-BAS01-1130, CON-B04-BAS01-1150",0,0%,Yes,No
0,CON-B01-GR-1070,RFT for Stairs  (B01) (GR),The Big - P.01 - UP-24-MAY-26.CON.P02.B01.SUP.GF,The Big - P.01 - UP-24-MAY-26,8,8,12-Apr-26,21-Apr-26,25-Aug-26,3-Sep-26,0,-109,0,0,0,0,"CON-B01-GR-1050, CON-B01-GR-1050, E-APP-B01-GR-1010, P-MDEL-1130",CON-B01-GR-1080,0,0%,Yes,Yes
0,CON-B01-GR-1040,Shuttering for Slabs & Beams (B01) (GR),The Big - P.01 - UP-24-MAY-26.CON.P02.B01.SUP.GF,The Big - P.01 - UP-24-MAY-26,8,8,12-Apr-26,21-Apr-26,25-Aug-26,3-Sep-26,0,-109,0,0,0,0,"E-APP-B01-GR-1030, E-APP-B01-GR-1020, CON-B01-GR-1030, CON-B01-BAS01-1140","CON-B01-GR-1060, CON-B01-GR-1060",0,0%,Yes,Yes
0,CON-B04-BAS01-1110,Pouring for  Ramps (B04) (Bas 01),The Big - P.01 - UP-24-MAY-26.CON.P01.B04.SUB.2,The Big - P.01 - UP-24-MAY-26,2,2,12-Apr-26,14-Apr-26,20-Jul-26,22-Jul-26,0,-80,0,0,0,0,"CON-B04-BAS01-1080, P-MDEL-1030","AB-SUB-B04-BAS1-1010, AB-SUB-B04-BAS1-1020, CON-B04-BAS01-1150",0,0%,Yes,No
0,CON-B03-GR-1000,"Scaffolding works for Walls, Col. & Cores (B03) (GR)",The Big - P.01 - UP-24-MAY-26.CON.P01.B03.SUP.GF,The Big - P.01 - UP-24-MAY-26,7,7,14-Apr-26,21-Apr-26,22-Jul-26,30-Jul-26,0,-80,0,0,0,0,CON-B03-BAS01-1100,"CON-B03-GR-1010, CON-B03-GR-1010",0,0%,Yes,No
0,CON-B03-GR-1010,"RFT for Walls, Col. & Cores (B03) (GR)",The Big - P.01 - UP-24-MAY-26.CON.P01.B03.SUP.GF,The Big - P.01 - UP-24-MAY-26,8,8,14-Apr-26,22-Apr-26,22-Jul-26,1-Aug-26,0,-80,0,0,0,1,"CON-B03-GR-1000, CON-B03-GR-1000, E-APP-B03-GR-1000, P-MDEL-1130","CON-B03-GR-1020, CON-B03-GR-1020",1,0%,Yes,No
0,CON-B01-GR-1060,RFT for Slabs & Beams (B01) (GR),The Big - P.01 - UP-24-MAY-26.CON.P02.B01.SUP.GF,The Big - P.01 - UP-24-MAY-26,10,10,15-Apr-26,26-Apr-26,29-Aug-26,8-Sep-26,0,-109,0,0,0,0,"CON-B01-GR-1040, CON-B01-GR-1040, E-APP-B01-GR-1020, E-APP-B01-GR-1030, P-MDEL-1130",CON-B01-GR-1090,0,0%,Yes,Yes
0,CON-B04-GR-1000,"Scaffolding works for Walls, Col. & Cores (B04) (GR)",The Big - P.01 - UP-24-MAY-26.CON.P01.B04.SUP.GF,The Big - P.01 - UP-24-MAY-26,7,7,15-Apr-26,22-Apr-26,22-Jul-26,1-Aug-26,0,-80,0,0,0,0,CON-B04-BAS01-1120,"CON-B04-GR-1010, CON-B04-GR-1010",0,0%,Yes,No
0,CON-B04-BAS01-1150,Curing for  Ramps & Stairs (B04) (Bas 01),The Big - P.01 - UP-24-MAY-26.CON.P01.B04.SUB.2,The Big - P.01 - UP-24-MAY-26,4,4,15-Apr-26,18-Apr-26,22-Jul-26,26-Jul-26,1,-99,0,0,0,0,"CON-B04-BAS01-1100, CON-B04-BAS01-1110",CON-B04-BAS01-1140,0,0%,Yes,No
0,CON-B03-GR-1020,"Shuttering for Walls, Col. & Cores (B03) (GR)",The Big - P.01 - UP-24-MAY-26.CON.P01.B03.SUP.GF,The Big - P.01 - UP-24-MAY-26,8,8,16-Apr-26,25-Apr-26,26-Jul-26,3-Aug-26,0,-80,0,0,0,0,"CON-B03-GR-1010, CON-B03-GR-1010, E-APP-B03-GR-1000",CON-B03-GR-1030,0,0%,Yes,No
0,CON-B04-GR-1010,"RFT for Walls, Col. & Cores (B04) (GR)",The Big - P.01 - UP-24-MAY-26.CON.P01.B04.SUP.GF,The Big - P.01 - UP-24-MAY-26,9,9,18-Apr-26,27-Apr-26,26-Jul-26,5-Aug-26,0,-80,0,0,0,1,"CON-B04-GR-1000, CON-B04-GR-1000, E-APP-B04-GR-1000, P-MDEL-1130","CON-B04-GR-1020, CON-B04-GR-1020",1,0%,Yes,No
0,CON-B04-GR-1020,"Shuttering for Walls, Col. & Cores (B04) (GR)",The Big - P.01 - UP-24-MAY-26.CON.P01.B04.SUP.GF,The Big - P.01 - UP-24-MAY-26,7,7,20-Apr-26,27-Apr-26,28-Jul-26,5-Aug-26,0,-80,0,0,0,0,"CON-B04-GR-1010, CON-B04-GR-1010, E-APP-B04-GR-1000",CON-B04-GR-1030,0,0%,Yes,No
0,CON-B01-GR-1080,Pouring for Stairs  (B01) (GR),The Big - P.01 - UP-24-MAY-26.CON.P02.B01.SUP.GF,The Big - P.01 - UP-24-MAY-26,2,2,22-Apr-26,23-Apr-26,5-Sep-26,6-Sep-26,0,-109,0,0,0,0,"CON-B01-GR-1070, P-MDEL-1030","CON-B01-GR-1100, AB-SUB-B01-GR-1010",0,0%,Yes,Yes
0,CON-B02-GR-1040,Shuttering for Slabs & Beams (B02) (GR),The Big - P.01 - UP-24-MAY-26.CON.P02.B02.SUP.GF,The Big - P.01 - UP-24-MAY-26,10,10,23-Apr-26,4-May-26,1-Aug-26,11-Aug-26,0,-79,0,0,0,0,"CON-B02-GR-1030, CON-B02-BAS01-1110, E-APP-B02-GR-1020, E-APP-B02-GR-1030","CON-B02-GR-1060, CON-B02-GR-1060",0,0%,Yes,No
0,CON-B01-GR-1100,"Curing for Slabs, Beams & Stairs (B01) (GR)",The Big - P.01 - UP-24-MAY-26.CON.P02.B01.SUP.GF,The Big - P.01 - UP-24-MAY-26,5,5,24-Apr-26,28-Apr-26,7-Sep-26,11-Sep-26,0,-136,0,0,0,0,CON-B01-GR-1080,CON-B01-1ST-1000,0,0%,Yes,Yes
0,CON-B02-GR-1060,RFT for Slabs & Beams (B02) (GR),The Big - P.01 - UP-24-MAY-26.CON.P02.B02.SUP.GF,The Big - P.01 - UP-24-MAY-26,12,12,26-Apr-26,9-May-26,3-Aug-26,16-Aug-26,0,-79,0,0,0,0,"CON-B02-GR-1040, CON-B02-GR-1040, E-APP-B02-GR-1020, E-APP-B02-GR-1030, P-MDEL-1130",CON-B02-GR-1100,0,0%,Yes,No
0,CON-B03-GR-1030,"Pouring for Walls, Col. & Cores (B03) (GR)",The Big - P.01 - UP-24-MAY-26.CON.P01.B03.SUP.GF,The Big - P.01 - UP-24-MAY-26,2,2,26-Apr-26,27-Apr-26,4-Aug-26,5-Aug-26,0,-80,0,0,0,0,"CON-B03-GR-1020, P-MDEL-1030","AB-SUB-B03-GR-1000, CON-B03-GR-1040",0,0%,Yes,No
0,CON-B01-GR-1090,Pouring for Slabs & Beams (B01) (GR),The Big - P.01 - UP-24-MAY-26.CON.P02.B01.SUP.GF,The Big - P.01 - UP-24-MAY-26,2,2,27-Apr-26,28-Apr-26,9-Sep-26,10-Sep-26,0,-109,0,0,0,0,"CON-B01-GR-1060, P-MDEL-1030","CON-B01-GR-1110, KD-MS-1040, AB-SUB-B01-GR-1030, AB-SUB-B01-GR-1020",0,0%,Yes,Yes
0,CON-B04-GR-1030,"Pouring for Walls, Col. & Cores (B04) (GR)",The Big - P.01 - UP-24-MAY-26.CON.P01.B04.SUP.GF,The Big - P.01 - UP-24-MAY-26,2,2,28-Apr-26,29-Apr-26,5-Aug-26,8-Aug-26,0,-80,0,0,0,0,"CON-B04-GR-1020, P-MDEL-1030","CON-B04-GR-1040, AB-SUB-B04-GR-1000",0,0%,Yes,No
0,CON-B03-GR-1040,Shuttering for Slabs & Beams (B03) (GR),The Big - P.01 - UP-24-MAY-26.CON.P01.B03.SUP.GF,The Big - P.01 - UP-24-MAY-26,7,7,28-Apr-26,5-May-26,6-Aug-26,13-Aug-26,0,-80,0,0,0,0,"E-APP-B03-GR-1030, E-APP-B03-GR-1020, CON-B03-GR-1030, CON-B03-BAS01-1110","CON-B03-GR-1050, CON-B03-GR-1060, CON-B03-GR-1070",0,0%,Yes,No
0,CON-B04-BAS01-1140,Dismantling Formwork (B04) (Bas 01),The Big - P.01 - UP-24-MAY-26.CON.P01.B04.SUB.2,The Big - P.01 - UP-24-MAY-26,1,1,29-Apr-26,29-Apr-26,6-Aug-26,7-Aug-26,1,-100,0,0,0,0,"CON-B04-BAS01-1120, CON-B04-BAS01-1130, CON-B04-BAS01-1150",CON-B04-GR-1040,0,0%,Yes,No
0,CON-B01-1ST-1000,"Scaffolding works for Walls, Col. & Cores (B01) (1st)",The Big - P.01 - UP-24-MAY-26.CON.P02.B01.SUP.1stF,The Big - P.01 - UP-24-MAY-26,5,5,29-Apr-26,4-May-26,12-Sep-26,16-Sep-26,0,-109,0,0,0,0,CON-B01-GR-1100,"CON-B01-1ST-1010, CON-B01-1ST-1010",0,0%,Yes,Yes
0,CON-B04-GR-1040,Shuttering for Slabs & Beams (B04) (GR),The Big - P.01 - UP-24-MAY-26.CON.P01.B04.SUP.GF,The Big - P.01 - UP-24-MAY-26,6,6,30-Apr-26,6-May-26,8-Aug-26,15-Aug-26,0,-80,0,0,0,0,"E-APP-B04-GR-1030, E-APP-B04-GR-1020, CON-B04-GR-1030, CON-B04-BAS01-1140","CON-B04-GR-1050, CON-B04-GR-1060, CON-B04-GR-1060",0,0%,Yes,No
0,CON-B03-GR-1050,Shuttering for Stairs  (B03) (GR),The Big - P.01 - UP-24-MAY-26.CON.P01.B03.SUP.GF,The Big - P.01 - UP-24-MAY-26,5,5,30-Apr-26,5-May-26,9-Aug-26,13-Aug-26,0,-80,0,0,0,0,"CON-B03-GR-1040, E-APP-B03-GR-1010","CON-B03-GR-1070, CON-B03-GR-1060",0,0%,Yes,No
0,CON-B03-GR-1060,RFT for Slabs & Beams (B03) (GR),The Big - P.01 - UP-24-MAY-26.CON.P01.B03.SUP.GF,The Big - P.01 - UP-24-MAY-26,5,5,2-May-26,6-May-26,10-Aug-26,15-Aug-26,0,-80,0,0,0,0,"CON-B03-GR-1040, CON-B03-GR-1050, E-APP-B03-GR-1020, E-APP-B03-GR-1030, P-MDEL-1130","CON-B03-GR-1070, CON-B03-GR-1080",0,0%,Yes,No
0,CON-B03-GR-1070,RFT for Stairs  (B03) (GR),The Big - P.01 - UP-24-MAY-26.CON.P01.B03.SUP.GF,The Big - P.01 - UP-24-MAY-26,4,4,3-May-26,6-May-26,11-Aug-26,15-Aug-26,0,-80,0,0,0,0,"CON-B03-GR-1050, CON-B03-GR-1040, CON-B03-GR-1060, E-APP-B03-GR-1010, P-MDEL-1130",CON-B03-GR-1090,0,0%,Yes,No
0,CON-B01-1ST-1010,"RFT for Walls, Col. & Cores (B01) (1st)",The Big - P.01 - UP-24-MAY-26.CON.P02.B01.SUP.1stF,The Big - P.01 - UP-24-MAY-26,7,7,3-May-26,10-May-26,15-Sep-26,22-Sep-26,0,-109,0,0,0,1,"CON-B01-1ST-1000, CON-B01-1ST-1000, E-APP-B01-1ST-1000, P-MDEL-1120","CON-B01-1ST-1020, CON-B01-1ST-1020",1,0%,Yes,Yes
0,CON-B04-GR-1060,RFT for Slabs & Beams (B04) (GR),The Big - P.01 - UP-24-MAY-26.CON.P01.B04.SUP.GF,The Big - P.01 - UP-24-MAY-26,5,5,4-May-26,9-May-26,11-Aug-26,17-Aug-26,0,-80,0,0,0,0,"CON-B04-GR-1040, CON-B04-GR-1040, E-APP-B04-GR-1020, E-APP-B04-GR-1030, P-MDEL-1130",CON-B04-GR-1080,0,0%,Yes,No
0,CON-B01-1ST-1020,"Shuttering for Walls, Col. & Cores (B01) (1st)",The Big - P.01 - UP-24-MAY-26.CON.P02.B01.SUP.1stF,The Big - P.01 - UP-24-MAY-26,7,7,6-May-26,13-May-26,19-Sep-26,26-Sep-26,0,-109,0,0,0,0,"CON-B01-1ST-1010, CON-B01-1ST-1010, E-APP-B01-1ST-1000",CON-B01-1ST-1030,0,0%,Yes,Yes
0,CON-B03-GR-1080,Pouring for Slabs & Beams (B03) (GR),The Big - P.01 - UP-24-MAY-26.CON.P01.B03.SUP.GF,The Big - P.01 - UP-24-MAY-26,2,2,7-May-26,9-May-26,16-Aug-26,17-Aug-26,0,-80,0,0,0,0,"P-MDEL-1030, CON-B03-GR-1060","AB-SUB-B03-GR-1010, AB-SUB-B03-GR-1020, CON-B03-GR-1110, CON-B03-GR-1100, KD-MS-1040",0,0%,Yes,No
0,CON-B03-GR-1090,Pouring for Stairs  (B03) (GR),The Big - P.01 - UP-24-MAY-26.CON.P01.B03.SUP.GF,The Big - P.01 - UP-24-MAY-26,2,2,7-May-26,9-May-26,16-Aug-26,17-Aug-26,0,-80,0,0,0,0,"P-MDEL-1030, CON-B03-GR-1070","CON-B03-GR-1100, AB-SUB-B03-GR-1030",0,0%,Yes,No
0,CON-B02-GR-1100,Pouring for Slabs & Beams (B02) (GR),The Big - P.01 - UP-24-MAY-26.CON.P02.B02.SUP.GF,The Big - P.01 - UP-24-MAY-26,2,2,10-May-26,11-May-26,17-Aug-26,18-Aug-26,0,-79,0,0,0,0,"CON-B02-GR-1060, P-MDEL-1030","CON-B02-GR-1110, KD-MS-1040, AB-SUB-B02-GR-1020, AB-SUB-B02-GR-1030",0,0%,Yes,No
0,CON-B04-GR-1080,Pouring for Slabs & Beams (B04) (GR),The Big - P.01 - UP-24-MAY-26.CON.P01.B04.SUP.GF,The Big - P.01 - UP-24-MAY-26,2,2,10-May-26,11-May-26,17-Aug-26,19-Aug-26,0,-80,0,0,0,0,"CON-B04-GR-1060, P-MDEL-1030","CON-B04-GR-1110, KD-MS-1040, AB-SUB-B04-GR-1010, AB-SUB-B04-GR-1020, CON-B04-GR-1100",0,0%,Yes,No
0,CON-B03-GR-1100,"Curing for Slabs, Beams & Stairs (B03) (GR)",The Big - P.01 - UP-24-MAY-26.CON.P01.B03.SUP.GF,The Big - P.01 - UP-24-MAY-26,3,3,10-May-26,12-May-26,18-Aug-26,20-Aug-26,0,-100,0,0,0,0,"CON-B03-GR-1090, CON-B03-GR-1080",CON-B03-1ST-1000,0,0%,Yes,No
0,KD-MS-1040,Ground Works Finish Date,The Big - P.01 - UP-24-MAY-26.KD.MI,The Big - P.01 - UP-24-MAY-26,0,0,,11-May-26,,10-Sep-26*,1,-122,0,0,0,0,"CON-B01-GR-1090, CON-B02-GR-1100, CON-B04-GR-1080, CON-B03-GR-1080",CON-B04-1ST-1000,0,0%,Yes,No
0,CON-B01-1ST-1030,"Pouring for Walls, Col. & Cores (B01) (1st)",The Big - P.01 - UP-24-MAY-26.CON.P02.B01.SUP.1stF,The Big - P.01 - UP-24-MAY-26,2,2,14-May-26,16-May-26,27-Sep-26,28-Sep-26,0,-109,0,0,0,0,"CON-B01-1ST-1020, P-MDEL-1030","CON-B01-1ST-1040, AB-SUB-B01-1ST-1000",0,0%,Yes,Yes
0,CON-B04-1ST-1000,"Scaffolding works for Walls, Col. & Cores (B04) (1st)",The Big - P.01 - UP-24-MAY-26.CON.P01.B04.SUP.1stF,The Big - P.01 - UP-24-MAY-26,5,5,16-May-26,20-May-26,12-Sep-26,16-Sep-26,0,-95,0,0,0,0,"CON-B04-GR-1100, KD-MS-1040","CON-B04-1ST-1010, CON-B04-1ST-1010",0,0%,Yes,No
0,CON-B01-1ST-1040,"Shuttering for Slabs, Beams & Stairs (B01) (1st)",The Big - P.01 - UP-24-MAY-26.CON.P02.B01.SUP.1stF,The Big - P.01 - UP-24-MAY-26,12,12,17-May-26,3-Jun-26,29-Sep-26,13-Oct-26,0,-109,0,0,0,0,"E-APP-B01-1ST-1030, E-APP-B01-1ST-1020, E-APP-B01-1ST-1010, CON-B01-1ST-1030, CON-B01-GR-1110, E-APP-B01-1ST-1010","CON-B01-1ST-1050, CON-B01-1ST-1050",0,0%,Yes,Yes
0,CON-B04-1ST-1010,"RFT for Walls, Col. & Cores (B04) (1st)",The Big - P.01 - UP-24-MAY-26.CON.P01.B04.SUP.1stF,The Big - P.01 - UP-24-MAY-26,7,7,19-May-26,26-May-26,15-Sep-26,22-Sep-26,0,-95,0,0,0,1,"CON-B04-1ST-1000, CON-B04-1ST-1000, E-APP-B04-1ST-1000, P-MDEL-1120","CON-B04-1ST-1020, CON-B04-1ST-1020",1,0%,Yes,No
0,CON-B01-1ST-1050,"RFT for Slabs, Beams & Stairs(B01) (1st)",The Big - P.01 - UP-24-MAY-26.CON.P02.B01.SUP.1stF,The Big - P.01 - UP-24-MAY-26,12,12,21-May-26,8-Jun-26,4-Oct-26,18-Oct-26,0,-109,0,0,0,0,"CON-B01-1ST-1040, CON-B01-1ST-1040, E-APP-B01-1ST-1010, E-APP-B01-1ST-1020, E-APP-B01-1ST-1030, P-MDEL-1120",CON-B01-1ST-1060,0,0%,Yes,Yes
0,CON-B04-1ST-1020,"Shuttering for Walls, Col. & Cores (B04) (1st)",The Big - P.01 - UP-24-MAY-26.CON.P01.B04.SUP.1stF,The Big - P.01 - UP-24-MAY-26,6,6,21-May-26,1-Jun-26,17-Sep-26,23-Sep-26,0,-95,0,0,0,0,"CON-B04-1ST-1010, CON-B04-1ST-1010, E-APP-B04-1ST-1000",CON-B04-1ST-1030,0,0%,Yes,No
0,CON-B03-1ST-1000,"Scaffolding works for Walls, Col. & Cores (B03) (1st)",The Big - P.01 - UP-24-MAY-26.CON.P01.B03.SUP.1stF,The Big - P.01 - UP-24-MAY-26,5,5,2-Jun-26,7-Jun-26,10-Sep-26,15-Sep-26,0,-83,0,0,0,0,CON-B03-GR-1100,"CON-B03-1ST-1010, CON-B03-1ST-1010",0,0%,Yes,No
0,CON-B04-1ST-1030,"Pouring for Walls, Col. & Cores (B04) (1st)",The Big - P.01 - UP-24-MAY-26.CON.P01.B04.SUP.1stF,The Big - P.01 - UP-24-MAY-26,2,2,2-Jun-26,3-Jun-26,24-Sep-26,26-Sep-26,0,-95,0,0,0,0,"CON-B04-1ST-1020, P-MDEL-1030","CON-B04-1ST-1040, AB-SUB-B04-1ST-1000",0,0%,Yes,No
0,CON-B04-1ST-1040,"Shuttering for Slabs, Beams & Stairs (B04) (1st)",The Big - P.01 - UP-24-MAY-26.CON.P01.B04.SUP.1stF,The Big - P.01 - UP-24-MAY-26,10,10,4-Jun-26,15-Jun-26,27-Sep-26,8-Oct-26,0,-95,0,0,0,0,"E-APP-B04-1ST-1030, E-APP-B04-1ST-1020, E-APP-B04-1ST-1010, CON-B04-1ST-1030, CON-B04-GR-1110","CON-B04-1ST-1050, CON-B04-1ST-1050",0,0%,Yes,No
0,CON-B03-1ST-1010,"RFT for Walls, Col. & Cores (B03) (1st)",The Big - P.01 - UP-24-MAY-26.CON.P01.B03.SUP.1stF,The Big - P.01 - UP-24-MAY-26,12,12,6-Jun-26,18-Jun-26,14-Sep-26,27-Sep-26,0,-83,0,0,0,1,"CON-B03-1ST-1000, CON-B03-1ST-1000, E-APP-B03-1ST-1000, P-MDEL-1120","CON-B03-1ST-1020, CON-B03-1ST-1020",1,0%,Yes,No
0,CON-B01-1ST-1060,"Pouring for Slabs, Beams & Stairs (B01) (1st)",The Big - P.01 - UP-24-MAY-26.CON.P02.B01.SUP.1stF,The Big - P.01 - UP-24-MAY-26,3,3,9-Jun-26,11-Jun-26,19-Oct-26,21-Oct-26,0,-109,0,0,0,0,"CON-B01-1ST-1050, P-MDEL-1030","CON-B01-1ST-1070, AB-SUB-B01-1ST-1030, AB-SUB-B01-1ST-1020, AB-SUB-B01-1ST-1010, CON-B01-2ND-1000",0,0%,Yes,Yes
0,CON-B04-1ST-1050,"RFT for Slabs, Beams & Stairs (B04) (1st)",The Big - P.01 - UP-24-MAY-26.CON.P01.B04.SUP.1stF,The Big - P.01 - UP-24-MAY-26,10,10,9-Jun-26,20-Jun-26,1-Oct-26,13-Oct-26,0,-95,0,0,0,0,"CON-B04-1ST-1040, CON-B04-1ST-1040, E-APP-B04-1ST-1010, E-APP-B04-1ST-1020, E-APP-B04-1ST-1030, P-MDEL-1120",CON-B04-1ST-1060,0,0%,Yes,No
0,CON-B03-1ST-1020,"Shuttering for Walls, Col. & Cores (B03) (1st)",The Big - P.01 - UP-24-MAY-26.CON.P01.B03.SUP.1stF,The Big - P.01 - UP-24-MAY-26,12,12,10-Jun-26,23-Jun-26,19-Sep-26,1-Oct-26,0,-83,0,0,0,0,"CON-B03-1ST-1010, CON-B03-1ST-1010, E-APP-B03-1ST-1000",CON-B03-1ST-1030,0,0%,Yes,No
0,CON-B01-2ND-1000,"Scaffolding works for Walls, Col. & Cores (B01) (2nd)",The Big - P.01 - UP-24-MAY-26.CON.P02.B01.SUP.2ndF,The Big - P.01 - UP-24-MAY-26,5,5,14-Jun-26,18-Jun-26,24-Oct-26,28-Oct-26,0,-109,0,0,0,0,CON-B01-1ST-1060,"CON-B01-2ND-1010, CON-B01-2ND-1010",0,0%,Yes,Yes
0,CON-B01-2ND-1010,"RFT for Walls, Col. & Cores (B01) (2nd)",The Big - P.01 - UP-24-MAY-26.CON.P02.B01.SUP.2ndF,The Big - P.01 - UP-24-MAY-26,7,7,16-Jun-26,23-Jun-26,26-Oct-26,2-Nov-26,0,-109,0,0,0,1,"CON-B01-2ND-1000, CON-B01-2ND-1000, E-APP-B01-2ND-1000, P-MDEL-1110","CON-B01-2ND-1020, CON-B01-2ND-1020",1,0%,Yes,Yes
0,CON-B01-2ND-1020,"Shuttering for Walls, Col. & Cores (B01) (2nd)",The Big - P.01 - UP-24-MAY-26.CON.P02.B01.SUP.2ndF,The Big - P.01 - UP-24-MAY-26,7,7,20-Jun-26,27-Jun-26,29-Oct-26,5-Nov-26,0,-109,0,0,0,0,"CON-B01-2ND-1010, CON-B01-2ND-1010, E-APP-B01-2ND-1000",CON-B01-2ND-1030,0,0%,Yes,Yes
0,CON-B04-1ST-1060,"Pouring for Slabs, Beams & Stairs (B04) (1st)",The Big - P.01 - UP-24-MAY-26.CON.P01.B04.SUP.1stF,The Big - P.01 - UP-24-MAY-26,3,3,21-Jun-26,23-Jun-26,14-Oct-26,17-Oct-26,0,-95,0,0,0,0,"CON-B04-1ST-1050, P-MDEL-1030","CON-B04-1ST-1070, CON-B04-1ST-1080, AB-SUB-B04-1ST-1010, AB-SUB-B04-1ST-1020, AB-SUB-B04-1ST-1030",0,0%,Yes,No
0,CON-B03-1ST-1030,"Pouring for Walls, Col. & Cores (B03) (1st)",The Big - P.01 - UP-24-MAY-26.CON.P01.B03.SUP.1stF,The Big - P.01 - UP-24-MAY-26,2,2,24-Jun-26,25-Jun-26,3-Oct-26,4-Oct-26,0,-83,0,0,0,0,"CON-B03-1ST-1020, P-MDEL-1030","CON-B03-1ST-1040, AB-SUB-B03-1ST-1000",0,0%,Yes,No
0,CON-B04-1ST-1070,"Curing for Slabs, Beams & Stairs (B04) (1st)",The Big - P.01 - UP-24-MAY-26.CON.P01.B04.SUP.1stF,The Big - P.01 - UP-24-MAY-26,3,3,24-Jun-26,26-Jun-26,18-Oct-26,20-Oct-26,0,-116,0,0,0,0,CON-B04-1ST-1060,CON-B04-2ND-1000,0,0%,Yes,No
0,CON-B03-1ST-1040,"Shuttering for Slabs, Beams & Stairs (B03) (1st)",The Big - P.01 - UP-24-MAY-26.CON.P01.B03.SUP.1stF,The Big - P.01 - UP-24-MAY-26,15,15,27-Jun-26,14-Jul-26,5-Oct-26,22-Oct-26,0,-83,0,0,0,0,"E-APP-B03-1ST-1030, E-APP-B03-1ST-1020, E-APP-B03-1ST-1010, CON-B03-1ST-1030, CON-B03-GR-1110","CON-B03-1ST-1050, CON-B03-1ST-1050",0,0%,Yes,No
0,CON-B04-2ND-1000,"Scaffolding works for Walls, Col. & Cores (B04) (2nd)",The Big - P.01 - UP-24-MAY-26.CON.P01.B04.SUP.2ndF,The Big - P.01 - UP-24-MAY-26,5,5,27-Jun-26,2-Jul-26,21-Oct-26,26-Oct-26,0,-96,0,0,0,0,CON-B04-1ST-1070,"CON-B04-2ND-1010, CON-B04-2ND-1010",0,0%,Yes,No
0,CON-B01-2ND-1030,"Pouring for Walls, Col. & Cores (B01) (2nd)",The Big - P.01 - UP-24-MAY-26.CON.P02.B01.SUP.2ndF,The Big - P.01 - UP-24-MAY-26,2,2,28-Jun-26,29-Jun-26,7-Nov-26,8-Nov-26,0,-109,0,0,0,0,"CON-B01-2ND-1020, P-MDEL-1030","CON-B01-2ND-1040, AB-SUB-B01-2ND-1000",0,0%,Yes,Yes
0,CON-B01-2ND-1040,"Shuttering for Slabs, Beams & Stairs (B01) (2nd)",The Big - P.01 - UP-24-MAY-26.CON.P02.B01.SUP.2ndF,The Big - P.01 - UP-24-MAY-26,8,8,1-Jul-26,9-Jul-26,9-Nov-26,17-Nov-26,0,-109,0,0,0,0,"E-APP-B01-2ND-1030, E-APP-B01-2ND-1020, E-APP-B01-2ND-1010, CON-B01-2ND-1030, CON-B01-1ST-1080","CON-B01-2ND-1050, CON-B01-2ND-1050",0,0%,Yes,Yes
0,CON-B04-2ND-1010,"RFT for Walls, Col. & Cores (B04) (2nd)",The Big - P.01 - UP-24-MAY-26.CON.P01.B04.SUP.2ndF,The Big - P.01 - UP-24-MAY-26,8,8,1-Jul-26,9-Jul-26,25-Oct-26,2-Nov-26,0,-96,0,0,0,1,"CON-B04-2ND-1000, CON-B04-2ND-1000, E-APP-B04-2ND-1000, P-MDEL-1110","CON-B04-2ND-1020, CON-B04-2ND-1020",1,0%,Yes,No
0,CON-B03-1ST-1050,"RFT for Slabs, Beams & Stairs (B03) (1st)",The Big - P.01 - UP-24-MAY-26.CON.P01.B03.SUP.1stF,The Big - P.01 - UP-24-MAY-26,15,15,2-Jul-26,19-Jul-26,11-Oct-26,27-Oct-26,0,-83,0,0,0,0,"CON-B03-1ST-1040, CON-B03-1ST-1040, E-APP-B03-1ST-1010, E-APP-B03-1ST-1020, E-APP-B03-1ST-1030, P-MDEL-1120",CON-B03-1ST-1060,0,0%,Yes,No
0,CON-B04-2ND-1020,"Shuttering for Walls, Col. & Cores (B04) (2nd)",The Big - P.01 - UP-24-MAY-26.CON.P01.B04.SUP.2ndF,The Big - P.01 - UP-24-MAY-26,8,8,5-Jul-26,13-Jul-26,28-Oct-26,5-Nov-26,0,-96,0,0,0,0,"CON-B04-2ND-1010, CON-B04-2ND-1010, E-APP-B04-2ND-1000",CON-B04-2ND-1030,0,0%,Yes,No
0,CON-B01-2ND-1050,"RFT for Slabs, Beams & Stairs (B01) (2nd)",The Big - P.01 - UP-24-MAY-26.CON.P02.B01.SUP.2ndF,The Big - P.01 - UP-24-MAY-26,8,8,6-Jul-26,14-Jul-26,14-Nov-26,22-Nov-26,0,-109,0,0,0,0,"CON-B01-2ND-1040, CON-B01-2ND-1040, E-APP-B01-2ND-1010, E-APP-B01-2ND-1020, E-APP-B01-2ND-1030, P-MDEL-1110",CON-B01-2ND-1060,0,0%,Yes,Yes
0,CON-B04-2ND-1030,"Pouring for Walls, Col. & Cores (B04) (2nd)",The Big - P.01 - UP-24-MAY-26.CON.P01.B04.SUP.2ndF,The Big - P.01 - UP-24-MAY-26,1,1,14-Jul-26,14-Jul-26,7-Nov-26,7-Nov-26,0,-96,0,0,0,0,"CON-B04-2ND-1020, P-MDEL-1030","CON-B04-2ND-1040, AB-SUB-B04-2ND-1000",0,0%,Yes,No
0,CON-B01-2ND-1060,"Pouring for Slabs, Beams & Stairs (B01) (2nd)",The Big - P.01 - UP-24-MAY-26.CON.P02.B01.SUP.2ndF,The Big - P.01 - UP-24-MAY-26,3,3,15-Jul-26,18-Jul-26,23-Nov-26,25-Nov-26,0,-109,0,0,0,0,"CON-B01-2ND-1050, P-MDEL-1030","CON-B01-2ND-1070, CON-B01-2ND-1080, AB-SUB-B01-2ND-1030, AB-SUB-B01-2ND-1020, AB-SUB-B01-2ND-1010, CON-B01-3RD-1000",0,0%,Yes,Yes
0,CON-B04-2ND-1040,"Shuttering for Slabs, Beams & Stairs (B04) (2nd)",The Big - P.01 - UP-24-MAY-26.CON.P01.B04.SUP.2ndF,The Big - P.01 - UP-24-MAY-26,10,10,15-Jul-26,27-Jul-26,8-Nov-26,18-Nov-26,0,-96,0,0,0,0,"E-APP-B04-2ND-1030, E-APP-B04-2ND-1020, E-APP-B04-2ND-1010, CON-B04-2ND-1030, CON-B04-1ST-1080","CON-B04-2ND-1050, CON-B04-2ND-1050",0,0%,Yes,No
0,CON-B01-3RD-1000,"Scaffolding works for Walls, Col. & Cores (B01) (3rd)",The Big - P.01 - UP-24-MAY-26.CON.P02.B01.SUP.3rdF,The Big - P.01 - UP-24-MAY-26,5,5,20-Jul-26,26-Jul-26,28-Nov-26,2-Dec-26,0,-109,0,0,0,0,CON-B01-2ND-1060,"CON-B01-3RD-1010, CON-B01-3RD-1010",0,0%,Yes,Yes
0,CON-B03-1ST-1060,"Pouring for Slabs, Beams & Stairs (B03) (1st)",The Big - P.01 - UP-24-MAY-26.CON.P01.B03.SUP.1stF,The Big - P.01 - UP-24-MAY-26,3,3,20-Jul-26,22-Jul-26,28-Oct-26,31-Oct-26,0,-83,0,0,0,0,"CON-B03-1ST-1050, P-MDEL-1030","CON-B03-1ST-1070, CON-B03-1ST-1080, AB-SUB-B03-1ST-1010, AB-SUB-B03-1ST-1020, AB-SUB-B03-1ST-1030",0,0%,Yes,No
0,CON-B04-2ND-1050,"RFT for Slabs, Beams & Stairs (B04) (2nd)",The Big - P.01 - UP-24-MAY-26.CON.P01.B04.SUP.2ndF,The Big - P.01 - UP-24-MAY-26,10,10,20-Jul-26,1-Aug-26,12-Nov-26,23-Nov-26,0,-96,0,0,0,0,"CON-B04-2ND-1040, CON-B04-2ND-1040, E-APP-B04-2ND-1010, E-APP-B04-2ND-1020, E-APP-B04-2ND-1030, P-MDEL-1110",CON-B04-2ND-1060,0,0%,Yes,No
0,CON-B01-3RD-1010,"RFT for Walls, Col. & Cores (B01) (3rd)",The Big - P.01 - UP-24-MAY-26.CON.P02.B01.SUP.3rdF,The Big - P.01 - UP-24-MAY-26,7,7,25-Jul-26,1-Aug-26,1-Dec-26,8-Dec-26,0,-109,0,0,0,1,"CON-B01-3RD-1000, CON-B01-3RD-1000, E-APP-B01-3ED-1000, E-APP-B01-3ED-1010, E-APP-B01-3ED-1020, E-APP-B01-3ED-1030, P-MDEL-1100","CON-B01-3RD-1020, CON-B01-3RD-1020",1,0%,Yes,Yes
0,CON-B01-3RD-1020,"Shuttering for Walls, Col. & Cores (B01) (3rd)",The Big - P.01 - UP-24-MAY-26.CON.P02.B01.SUP.3rdF,The Big - P.01 - UP-24-MAY-26,7,7,28-Jul-26,4-Aug-26,5-Dec-26,12-Dec-26,0,-109,0,0,0,0,"CON-B01-3RD-1010, CON-B01-3RD-1010, E-APP-B01-3ED-1000",CON-B01-3RD-1030,0,0%,Yes,Yes
0,CON-B04-2ND-1060,"Pouring for Slabs, Beams & Stairs (B04) (2nd)",The Big - P.01 - UP-24-MAY-26.CON.P01.B04.SUP.2ndF,The Big - P.01 - UP-24-MAY-26,3,3,2-Aug-26,4-Aug-26,24-Nov-26,26-Nov-26,0,-96,0,0,0,0,"CON-B04-2ND-1050, P-MDEL-1030","CON-B04-2ND-1070, CON-B04-2ND-1080, AB-SUB-B04-2ND-1010, AB-SUB-B04-2ND-1020, AB-SUB-B04-2ND-1030",0,0%,Yes,No
0,CON-B01-3RD-1030,"Pouring for Walls, Col. & Cores (B01) (3rd)",The Big - P.01 - UP-24-MAY-26.CON.P02.B01.SUP.3rdF,The Big - P.01 - UP-24-MAY-26,2,2,5-Aug-26,6-Aug-26,13-Dec-26,14-Dec-26,0,-109,0,0,0,0,"CON-B01-3RD-1020, P-MDEL-1030","CON-B01-3RD-1040, AB-SUB-B01-3RD-1000",0,0%,Yes,Yes
0,CON-B04-2ND-1070,"Curing for Slabs, Beams & Stairs (B04) (2nd)",The Big - P.01 - UP-24-MAY-26.CON.P01.B04.SUP.2ndF,The Big - P.01 - UP-24-MAY-26,3,3,5-Aug-26,7-Aug-26,27-Nov-26,29-Nov-26,0,-114,0,0,0,0,CON-B04-2ND-1060,CON-B04-3RD-1000,0,0%,Yes,No
0,CON-B01-3RD-1040,"Shuttering for Slabs, Beams & Stairs (B01) (3rd)",The Big - P.01 - UP-24-MAY-26.CON.P02.B01.SUP.3rdF,The Big - P.01 - UP-24-MAY-26,10,10,8-Aug-26,18-Aug-26,15-Dec-26,26-Dec-26,0,-109,0,0,0,0,"E-APP-B01-3ED-1030, E-APP-B01-3ED-1020, E-APP-B01-3ED-1010, CON-B01-3RD-1030, CON-B01-2ND-1080","CON-B01-3RD-1050, CON-B01-3RD-1050",0,0%,Yes,Yes
0,CON-B03-2ND-1000,"Scaffolding works for Walls, Col. & Cores (B03) (2nd)",The Big - P.01 - UP-24-MAY-26.CON.P01.B03.SUP.2ndF,The Big - P.01 - UP-24-MAY-26,5,5,8-Aug-26,12-Aug-26,16-Nov-26,21-Nov-26,0,-84,0,0,0,0,CON-B03-1ST-1070,"CON-B03-2ND-1010, CON-B03-2ND-1010",0,0%,Yes,No
0,CON-B04-3RD-1000,"Scaffolding works for Walls, Col. & Cores (B04) (3rd)",The Big - P.01 - UP-24-MAY-26.CON.P01.B04.SUP.3rdF,The Big - P.01 - UP-24-MAY-26,5,5,8-Aug-26,12-Aug-26,30-Nov-26,5-Dec-26,0,-96,0,0,0,0,CON-B04-2ND-1070,"CON-B04-3RD-1010, CON-B04-3RD-1010",0,0%,Yes,No
0,CON-B03-2ND-1010,"RFT for Walls, Col. & Cores (B03) (2nd)",The Big - P.01 - UP-24-MAY-26.CON.P01.B03.SUP.2ndF,The Big - P.01 - UP-24-MAY-26,12,12,11-Aug-26,24-Aug-26,19-Nov-26,2-Dec-26,0,-84,0,0,0,1,"CON-B03-2ND-1000, CON-B03-2ND-1000, E-APP-B03-2ND-1000, P-MDEL-1110","CON-B03-2ND-1020, CON-B03-2ND-1020",1,0%,Yes,No
0,CON-B04-3RD-1010,"RFT for Walls, Col. & Cores (B04) (3rd)",The Big - P.01 - UP-24-MAY-26.CON.P01.B04.SUP.3rdF,The Big - P.01 - UP-24-MAY-26,8,8,11-Aug-26,19-Aug-26,3-Dec-26,12-Dec-26,0,-96,0,0,0,1,"CON-B04-3RD-1000, CON-B04-3RD-1000, E-APP-B04-2RD-1000, P-MDEL-1100","CON-B04-3RD-1020, CON-B04-3RD-1020",1,0%,Yes,No
0,CON-B01-3RD-1050,"RFT for Slabs, Beams & Stairs (B01) (3rd)",The Big - P.01 - UP-24-MAY-26.CON.P02.B01.SUP.3rdF,The Big - P.01 - UP-24-MAY-26,10,10,12-Aug-26,23-Aug-26,20-Dec-26,30-Dec-26,0,-109,0,0,0,0,"CON-B01-3RD-1040, CON-B01-3RD-1040, P-MDEL-1100",CON-B01-3RD-1060,0,0%,Yes,Yes
0,CON-B04-3RD-1020,"Shuttering for Walls, Col. & Cores (B04) (3rd)",The Big - P.01 - UP-24-MAY-26.CON.P01.B04.SUP.3rdF,The Big - P.01 - UP-24-MAY-26,8,8,15-Aug-26,23-Aug-26,7-Dec-26,15-Dec-26,0,-96,0,0,0,0,"CON-B04-3RD-1010, CON-B04-3RD-1010, E-APP-B04-2RD-1000",CON-B04-3RD-1030,0,0%,Yes,No
0,CON-B03-2ND-1020,"Shuttering for Walls, Col. & Cores (B03) (2nd)",The Big - P.01 - UP-24-MAY-26.CON.P01.B03.SUP.2ndF,The Big - P.01 - UP-24-MAY-26,12,12,16-Aug-26,30-Aug-26,24-Nov-26,7-Dec-26,0,-84,0,0,0,0,"CON-B03-2ND-1010, CON-B03-2ND-1010, E-APP-B03-2ND-1000",CON-B03-2ND-1030,0,0%,Yes,No
0,CON-B01-3RD-1060,"Pouring for Slabs, Beams & Stairs (B01) (3rd)",The Big - P.01 - UP-24-MAY-26.CON.P02.B01.SUP.3rdF,The Big - P.01 - UP-24-MAY-26,3,3,24-Aug-26,26-Aug-26,31-Dec-26,3-Jan-27,0,-109,0,0,0,0,"CON-B01-3RD-1050, P-MDEL-1030","CON-B01-3RD-1070, AB-SUB-B01-3RD-1030, AB-SUB-B01-3RD-1010, AB-SUB-B01-3RD-1020, CON-B01-4TH-1000",0,0%,Yes,Yes
0,CON-B04-3RD-1030,"Pouring for Walls, Col. & Cores (B04) (3rd)",The Big - P.01 - UP-24-MAY-26.CON.P01.B04.SUP.3rdF,The Big - P.01 - UP-24-MAY-26,1,1,24-Aug-26,24-Aug-26,16-Dec-26,16-Dec-26,0,-96,0,0,0,0,"CON-B04-3RD-1020, P-MDEL-1030","CON-B04-3RD-1040, AB-SUB-B04-3RD-1000",0,0%,Yes,No
0,CON-B04-3RD-1040,"Shuttering for Slabs, Beams & Stairs (B04) (3rd)",The Big - P.01 - UP-24-MAY-26.CON.P01.B04.SUP.3rdF,The Big - P.01 - UP-24-MAY-26,10,10,25-Aug-26,6-Sep-26,17-Dec-26,28-Dec-26,0,-96,0,0,0,0,"E-APP-B04-2RD-1030, E-APP-B04-2RD-1020, E-APP-B04-2RD-1010, CON-B04-3RD-1030, CON-B04-2ND-1080","CON-B04-3RD-1050, CON-B04-3RD-1050",0,0%,Yes,No
0,CON-B01-4TH-1000,"Scaffolding works for Walls, Col. & Cores (B01) (4th)",The Big - P.01 - UP-24-MAY-26.CON.P02.B01.SUP.4thF,The Big - P.01 - UP-24-MAY-26,5,5,30-Aug-26,3-Sep-26,5-Jan-27,11-Jan-27,0,-109,0,0,0,0,CON-B01-3RD-1060,"CON-B01-4TH-1010, CON-B01-4TH-1010",0,0%,Yes,Yes
0,CON-B03-2ND-1030,"Pouring for Walls, Col. & Cores (B03) (2nd)",The Big - P.01 - UP-24-MAY-26.CON.P01.B03.SUP.2ndF,The Big - P.01 - UP-24-MAY-26,2,2,31-Aug-26,1-Sep-26,8-Dec-26,9-Dec-26,0,-84,0,0,0,0,"CON-B03-2ND-1020, P-MDEL-1030","CON-B03-2ND-1040, AB-SUB-B03-2ND-1000",0,0%,Yes,No
0,CON-B04-3RD-1050,"RFT for Slabs, Beams & Stairs (B04) (3rd)",The Big - P.01 - UP-24-MAY-26.CON.P01.B04.SUP.3rdF,The Big - P.01 - UP-24-MAY-26,10,10,31-Aug-26,10-Sep-26,22-Dec-26,2-Jan-27,0,-96,0,0,0,0,"CON-B04-3RD-1040, CON-B04-3RD-1040, E-APP-B04-2RD-1010, E-APP-B04-2RD-1020, E-APP-B04-2RD-1030, P-MDEL-1100",CON-B04-3RD-1060,0,0%,Yes,No
0,CON-B01-4TH-1010,"RFT for Walls, Col. & Cores (B01) (4th)",The Big - P.01 - UP-24-MAY-26.CON.P02.B01.SUP.4thF,The Big - P.01 - UP-24-MAY-26,7,7,2-Sep-26,9-Sep-26,10-Jan-27,17-Jan-27,0,-109,0,0,0,1,"CON-B01-4TH-1000, CON-B01-4TH-1000, E-APP-B01-4TH-1000, E-APP-B01-4TH-1010, E-APP-B01-4TH-1020, E-APP-B01-4TH-1030, P-MDEL-1090","CON-B01-4TH-1020, CON-B01-4TH-1020",1,0%,Yes,Yes
0,CON-B03-2ND-1040,"Shuttering for Slabs, Beams & Stairs (B03) (2nd)",The Big - P.01 - UP-24-MAY-26.CON.P01.B03.SUP.2ndF,The Big - P.01 - UP-24-MAY-26,15,15,2-Sep-26,19-Sep-26,10-Dec-26,27-Dec-26,0,-84,0,0,0,0,"E-APP-B03-2ND-1030, E-APP-B03-2ND-1020, E-APP-B03-2ND-1010, CON-B03-2ND-1030, CON-B03-1ST-1080","CON-B03-2ND-1050, CON-B03-2ND-1050",0,0%,Yes,No
0,CON-B01-4TH-1020,"Shuttering for Walls, Col. & Cores (B01) (4th)",The Big - P.01 - UP-24-MAY-26.CON.P02.B01.SUP.4thF,The Big - P.01 - UP-24-MAY-26,7,7,6-Sep-26,13-Sep-26,13-Jan-27,20-Jan-27,0,-109,0,0,0,0,"CON-B01-4TH-1010, CON-B01-4TH-1010, E-APP-B01-4TH-1000",CON-B01-4TH-1030,0,0%,Yes,Yes
0,CON-B03-2ND-1050,"RFT for Slabs, Beams & Stairs(B03) (2nd)",The Big - P.01 - UP-24-MAY-26.CON.P01.B03.SUP.2ndF,The Big - P.01 - UP-24-MAY-26,15,15,7-Sep-26,23-Sep-26,15-Dec-26,31-Dec-26,0,-84,0,0,0,0,"CON-B03-2ND-1040, CON-B03-2ND-1040, E-APP-B03-2ND-1010, E-APP-B03-2ND-1020, E-APP-B03-2ND-1030, P-MDEL-1110",CON-B03-2ND-1060,0,0%,Yes,No
0,CON-B04-3RD-1060,"Pouring for Slabs, Beams & Stairs (B04) (3rd)",The Big - P.01 - UP-24-MAY-26.CON.P01.B04.SUP.3rdF,The Big - P.01 - UP-24-MAY-26,3,3,12-Sep-26,14-Sep-26,3-Jan-27,5-Jan-27,0,-96,0,0,0,0,"CON-B04-3RD-1050, P-MDEL-1030","CON-B04-3RD-1070, CON-B04-3RD-1080, AB-SUB-B04-3RD-1010, AB-SUB-B04-3RD-1020, AB-SUB-B04-3RD-1030, CON-B04-4TH-1000",0,0%,Yes,No
0,CON-B01-4TH-1030,"Pouring for Walls, Col. & Cores (B01) (4th)",The Big - P.01 - UP-24-MAY-26.CON.P02.B01.SUP.4thF,The Big - P.01 - UP-24-MAY-26,2,2,14-Sep-26,15-Sep-26,21-Jan-27,23-Jan-27,0,-109,0,0,0,0,"CON-B01-4TH-1020, P-MDEL-1030","CON-B01-4TH-1040, AB-SUB-B01-4TH-1000",0,0%,Yes,Yes
0,CON-B04-4TH-1000,"Scaffolding works for Walls, Col. & Cores (B04) (4th)",The Big - P.01 - UP-24-MAY-26.CON.P01.B04.SUP.4thF,The Big - P.01 - UP-24-MAY-26,5,5,15-Sep-26,20-Sep-26,6-Jan-27,12-Jan-27,0,-96,0,0,0,0,CON-B04-3RD-1060,"CON-B04-4TH-1010, CON-B04-4TH-1010",0,0%,Yes,No
0,CON-B01-4TH-1040,"Shuttering for Slabs, Beams & Stairs (B01) (4th)",The Big - P.01 - UP-24-MAY-26.CON.P02.B01.SUP.4thF,The Big - P.01 - UP-24-MAY-26,12,12,16-Sep-26,29-Sep-26,24-Jan-27,7-Feb-27,0,-109,0,0,0,0,"E-APP-B01-4TH-1030, E-APP-B01-4TH-1020, E-APP-B01-4TH-1010, CON-B01-4TH-1030, CON-B01-3RD-1080","CON-B01-4TH-1050, CON-B01-4TH-1050",0,0%,Yes,Yes
0,CON-B04-4TH-1010,"RFT for Walls, Col. & Cores (B04) (4th)",The Big - P.01 - UP-24-MAY-26.CON.P01.B04.SUP.4thF,The Big - P.01 - UP-24-MAY-26,8,8,19-Sep-26,27-Sep-26,11-Jan-27,19-Jan-27,0,-96,0,0,0,1,"CON-B04-4TH-1000, CON-B04-4TH-1000, E-APP-B04-4TH-1000, P-MDEL-1090","CON-B04-4TH-1020, CON-B04-4TH-1020",1,0%,Yes,No
0,CON-B01-4TH-1050,"RFT for Slabs, Beams & Stairs (B01) (4th)",The Big - P.01 - UP-24-MAY-26.CON.P02.B01.SUP.4thF,The Big - P.01 - UP-24-MAY-26,12,12,21-Sep-26,4-Oct-26,30-Jan-27,11-Feb-27,0,-109,0,0,0,0,"CON-B01-4TH-1040, CON-B01-4TH-1040, P-MDEL-1090",CON-B01-4TH-1060,0,0%,Yes,Yes
0,CON-B04-4TH-1020,"Shuttering for Walls, Col. & Cores (B04) (4th)",The Big - P.01 - UP-24-MAY-26.CON.P01.B04.SUP.4thF,The Big - P.01 - UP-24-MAY-26,8,8,22-Sep-26,30-Sep-26,14-Jan-27,23-Jan-27,0,-96,0,0,0,0,"CON-B04-4TH-1010, CON-B04-4TH-1010, E-APP-B04-4TH-1000",CON-B04-4TH-1030,0,0%,Yes,No
0,CON-B03-2ND-1060,"Pouring for Slabs, Beams & Stairs (B03) (2nd)",The Big - P.01 - UP-24-MAY-26.CON.P01.B03.SUP.2ndF,The Big - P.01 - UP-24-MAY-26,3,3,24-Sep-26,27-Sep-26,2-Jan-27,4-Jan-27,0,-84,0,0,0,0,"CON-B03-2ND-1050, P-MDEL-1030","CON-B03-2ND-1070, CON-B03-2ND-1080, AB-SUB-B03-2ND-1010, AB-SUB-B03-2ND-1020, AB-SUB-B03-2ND-1030",0,0%,Yes,No
0,CON-B03-2ND-1070,"Curing for Slabs, Beams & Stairs (B03) (2nd)",The Big - P.01 - UP-24-MAY-26.CON.P01.B03.SUP.2ndF,The Big - P.01 - UP-24-MAY-26,3,3,28-Sep-26,30-Sep-26,5-Jan-27,7-Jan-27,0,-99,0,0,0,0,CON-B03-2ND-1060,CON-B03-3RD-1000,0,0%,Yes,No
0,CON-B04-4TH-1030,"Pouring for Walls, Col. & Cores (B04) (4th)",The Big - P.01 - UP-24-MAY-26.CON.P01.B04.SUP.4thF,The Big - P.01 - UP-24-MAY-26,1,1,1-Oct-26,1-Oct-26,24-Jan-27,24-Jan-27,0,-96,0,0,0,0,"CON-B04-4TH-1020, P-MDEL-1030","CON-B04-4TH-1040, AB-SUB-B04-4TH-1000",0,0%,Yes,No
0,CON-B04-4TH-1040,"Shuttering for Slabs, Beams & Stairs (B04) (4th)",The Big - P.01 - UP-24-MAY-26.CON.P01.B04.SUP.4thF,The Big - P.01 - UP-24-MAY-26,10,10,3-Oct-26,14-Oct-26,26-Jan-27,6-Feb-27,0,-96,0,0,0,0,"E-APP-B04-4TH-1030, E-APP-B04-4TH-1020, E-APP-B04-4TH-1010, CON-B04-4TH-1030, CON-B04-3RD-1080","CON-B04-4TH-1050, CON-B04-4TH-1050",0,0%,Yes,No
0,CON-B01-4TH-1060,"Pouring for Slabs, Beams & Stairs (B01) (4th)",The Big - P.01 - UP-24-MAY-26.CON.P02.B01.SUP.4thF,The Big - P.01 - UP-24-MAY-26,3,3,5-Oct-26,8-Oct-26,13-Feb-27,15-Feb-27,0,-109,0,0,0,0,"CON-B01-4TH-1050, P-MDEL-1030","CON-B01-4TH-1070, AB-SUB-B01-4TH-1010, AB-SUB-B01-4TH-1020, AB-SUB-B01-4TH-1030, CON-B01-5TH-1000",0,0%,Yes,Yes
0,CON-B04-4TH-1050,"RFT for Slabs, Beams & Stairs (B04) (4th)",The Big - P.01 - UP-24-MAY-26.CON.P01.B04.SUP.4thF,The Big - P.01 - UP-24-MAY-26,10,10,8-Oct-26,19-Oct-26,31-Jan-27,10-Feb-27,0,-96,0,0,0,0,"CON-B04-4TH-1040, CON-B04-4TH-1040, E-APP-B04-4TH-1010, E-APP-B04-4TH-1020, E-APP-B04-4TH-1030, P-MDEL-1090",CON-B04-4TH-1060,0,0%,Yes,No
0,CON-B01-5TH-1000,"Scaffolding works for Walls, Col. & Cores (B01) (5th)",The Big - P.01 - UP-24-MAY-26.CON.P02.B01.SUP.5thF,The Big - P.01 - UP-24-MAY-26,3,3,11-Oct-26,13-Oct-26,17-Feb-27,20-Feb-27,0,-109,0,0,0,0,CON-B01-4TH-1060,"CON-B01-5TH-1010, CON-B01-5TH-1010",0,0%,Yes,Yes
0,CON-B03-3RD-1000,"Scaffolding works for Walls, Col. & Cores (B03) (3rd)",The Big - P.01 - UP-24-MAY-26.CON.P01.B03.SUP.3rdF,The Big - P.01 - UP-24-MAY-26,5,5,11-Oct-26,15-Oct-26,18-Jan-27,23-Jan-27,0,-84,0,0,0,0,CON-B03-2ND-1070,"CON-B03-3RD-1010, CON-B03-3RD-1010",0,0%,Yes,No
0,CON-B01-5TH-1010,"RFT for Walls, Col. & Cores (B01) (5th)",The Big - P.01 - UP-24-MAY-26.CON.P02.B01.SUP.5thF,The Big - P.01 - UP-24-MAY-26,6,6,14-Oct-26,20-Oct-26,21-Feb-27,27-Feb-27,0,-109,0,0,0,1,"CON-B01-5TH-1000, CON-B01-5TH-1000, E-APP-B01-5TH-1000, P-MDEL-1080","CON-B01-5TH-1020, CON-B01-5TH-1020",1,0%,Yes,Yes
0,CON-B03-3RD-1010,"RFT for Walls, Col. & Cores (B03) (3rd)",The Big - P.01 - UP-24-MAY-26.CON.P01.B03.SUP.3rdF,The Big - P.01 - UP-24-MAY-26,12,12,14-Oct-26,27-Oct-26,21-Jan-27,4-Feb-27,0,-84,0,0,0,1,"CON-B03-3RD-1000, CON-B03-3RD-1000, E-APP-B03-3RD-1000, P-MDEL-1100","CON-B03-3RD-1020, CON-B03-3RD-1020",1,0%,Yes,No
0,CON-B01-5TH-1020,"Shuttering for Walls, Col. & Cores (B01) (5th)",The Big - P.01 - UP-24-MAY-26.CON.P02.B01.SUP.5thF,The Big - P.01 - UP-24-MAY-26,6,6,18-Oct-26,24-Oct-26,24-Feb-27,2-Mar-27,0,-109,0,0,0,0,"CON-B01-5TH-1010, CON-B01-5TH-1010, E-APP-B01-5TH-1000",CON-B01-5TH-1030,0,0%,Yes,Yes
0,CON-B03-3RD-1020,"Shuttering for Walls, Col. & Cores (B03) (3rd)",The Big - P.01 - UP-24-MAY-26.CON.P01.B03.SUP.3rdF,The Big - P.01 - UP-24-MAY-26,12,12,19-Oct-26,1-Nov-26,27-Jan-27,9-Feb-27,0,-84,0,0,0,0,"CON-B03-3RD-1010, CON-B03-3RD-1010, E-APP-B03-3RD-1000",CON-B03-3RD-1030,0,0%,Yes,No
0,CON-B04-4TH-1060,"Pouring for Slabs, Beams & Stairs (B04) (4th)",The Big - P.01 - UP-24-MAY-26.CON.P01.B04.SUP.4thF,The Big - P.01 - UP-24-MAY-26,2,2,20-Oct-26,21-Oct-26,11-Feb-27,13-Feb-27,0,-96,0,0,0,0,"CON-B04-4TH-1050, P-MDEL-1030","CON-B04-4TH-1070, CON-B04-4TH-1080, AB-SUB-B04-4TH-1010, AB-SUB-B04-4TH-1020, AB-SUB-B04-4TH-1030",0,0%,Yes,No
0,CON-B04-4TH-1070,"Curing for Slabs, Beams & Stairs (B04) (4th)",The Big - P.01 - UP-24-MAY-26.CON.P01.B04.SUP.4thF,The Big - P.01 - UP-24-MAY-26,3,3,22-Oct-26,24-Oct-26,14-Feb-27,16-Feb-27,0,-115,0,0,0,3,CON-B04-4TH-1060,CON-B04-5TH-1000,3,0%,Yes,No
0,CON-B01-5TH-1030,"Pouring for Walls, Col. & Cores (B01) (5th)",The Big - P.01 - UP-24-MAY-26.CON.P02.B01.SUP.5thF,The Big - P.01 - UP-24-MAY-26,2,2,25-Oct-26,26-Oct-26,3-Mar-27,4-Mar-27,0,-109,0,0,0,0,"CON-B01-5TH-1020, P-MDEL-1030","CON-B01-5TH-1040, AB-SUB-B01-5TH-1000",0,0%,Yes,Yes
0,CON-B04-5TH-1000,"Scaffolding works for Walls, Col. & Cores (B04) (5th)",The Big - P.01 - UP-24-MAY-26.CON.P01.B04.SUP.5thF,The Big - P.01 - UP-24-MAY-26,5,5,25-Oct-26,29-Oct-26,17-Feb-27,22-Feb-27,0,-97,0,0,0,0,CON-B04-4TH-1070,"CON-B04-5TH-1010, CON-B04-5TH-1010",0,0%,Yes,No
0,CON-B01-5TH-1040,"Shuttering for Slabs, Beams & Stairs (B01) (5th)",The Big - P.01 - UP-24-MAY-26.CON.P02.B01.SUP.5thF,The Big - P.01 - UP-24-MAY-26,9,9,27-Oct-26,5-Nov-26,6-Mar-27,18-Mar-27,0,-109,0,0,0,0,"E-APP-B01-5TH-1030, CON-B01-5TH-1030, CON-B01-4TH-1080, E-APP-B01-5TH-1010, E-APP-B01-5TH-1020","CON-B01-5TH-1050, CON-B01-5TH-1050",0,0%,Yes,Yes
0,CON-B04-5TH-1010,"RFT for Walls, Col. & Cores (B04) (5th)",The Big - P.01 - UP-24-MAY-26.CON.P01.B04.SUP.5thF,The Big - P.01 - UP-24-MAY-26,8,8,28-Oct-26,5-Nov-26,21-Feb-27,1-Mar-27,0,-97,0,0,0,1,"CON-B04-5TH-1000, CON-B04-5TH-1000, E-APP-B04-5TH-1000, P-MDEL-1080","CON-B04-5TH-1020, CON-B04-5TH-1020",1,0%,Yes,No
0,CON-B04-5TH-1020,"Shuttering for Walls, Col. & Cores (B04) (5th)",The Big - P.01 - UP-24-MAY-26.CON.P01.B04.SUP.5thF,The Big - P.01 - UP-24-MAY-26,8,8,31-Oct-26,8-Nov-26,23-Feb-27,3-Mar-27,0,-97,0,0,0,0,"CON-B04-5TH-1010, CON-B04-5TH-1010, E-APP-B04-5TH-1000",CON-B04-5TH-1030,0,0%,Yes,No
0,CON-B01-5TH-1050,"RFT for Slabs, Beams & Stairs (B01) (5th)",The Big - P.01 - UP-24-MAY-26.CON.P02.B01.SUP.5thF,The Big - P.01 - UP-24-MAY-26,9,9,1-Nov-26,10-Nov-26,14-Mar-27,23-Mar-27,0,-109,0,0,0,0,"CON-B01-5TH-1040, CON-B01-5TH-1040, E-APP-B01-5TH-1010, E-APP-B01-5TH-1020, E-APP-B01-5TH-1030, P-MDEL-1080",CON-B01-5TH-1060,0,0%,Yes,Yes
0,CON-B03-3RD-1030,"Pouring for Walls, Col. & Cores (B03) (3rd)",The Big - P.01 - UP-24-MAY-26.CON.P01.B03.SUP.3rdF,The Big - P.01 - UP-24-MAY-26,2,2,2-Nov-26,3-Nov-26,10-Feb-27,11-Feb-27,0,-84,0,0,0,0,"CON-B03-3RD-1020, P-MDEL-1030","CON-B03-3RD-1040, AB-SUB-B03-3RD-1000",0,0%,Yes,No
0,CON-B03-3RD-1040,"Shuttering for Slabs, Beams & Stairs (B03) (3rd)",The Big - P.01 - UP-24-MAY-26.CON.P01.B03.SUP.3rdF,The Big - P.01 - UP-24-MAY-26,15,15,4-Nov-26,21-Nov-26,13-Feb-27,1-Mar-27,0,-84,0,0,0,0,"E-APP-B03-3RD-1030, E-APP-B03-3RD-1020, E-APP-B03-3RD-1010, CON-B03-3RD-1030, CON-B03-2ND-1080","CON-B03-3RD-1050, CON-B03-3RD-1050",0,0%,Yes,No
0,CON-B03-3RD-1050,"RFT for Slabs, Beams & Stairs (B03) (3rd)",The Big - P.01 - UP-24-MAY-26.CON.P01.B03.SUP.3rdF,The Big - P.01 - UP-24-MAY-26,15,15,9-Nov-26,25-Nov-26,17-Feb-27,6-Mar-27,0,-84,0,0,0,0,"CON-B03-3RD-1040, CON-B03-3RD-1040, E-APP-B03-3RD-1010, E-APP-B03-3RD-1020, E-APP-B03-3RD-1030, P-MDEL-1100",CON-B03-3RD-1060,0,0%,Yes,No
0,CON-B04-5TH-1030,"Pouring for Walls, Col. & Cores (B04) (5th)",The Big - P.01 - UP-24-MAY-26.CON.P01.B04.SUP.5thF,The Big - P.01 - UP-24-MAY-26,1,1,9-Nov-26,9-Nov-26,4-Mar-27,4-Mar-27,0,-97,0,0,0,0,"CON-B04-5TH-1020, P-MDEL-1030","CON-B04-5TH-1040, AB-SUB-B04-5TH-1000",0,0%,Yes,No
0,CON-B04-5TH-1040,"Shuttering for Slabs, Beams & Stairs (B04) (5th)",The Big - P.01 - UP-24-MAY-26.CON.P01.B04.SUP.5thF,The Big - P.01 - UP-24-MAY-26,10,10,10-Nov-26,21-Nov-26,6-Mar-27,20-Mar-27,0,-97,0,0,0,0,"E-APP-B04-5TH-1030, E-APP-B04-5TH-1020, E-APP-B04-5TH-1010, CON-B04-5TH-1030, CON-B04-4TH-1080","CON-B04-5TH-1050, CON-B04-5TH-1050",0,0%,Yes,No
0,CON-B01-5TH-1060,"Pouring for Slabs, Beams & Stairs (B01) (5th)",The Big - P.01 - UP-24-MAY-26.CON.P02.B01.SUP.5thF,The Big - P.01 - UP-24-MAY-26,2,2,11-Nov-26,12-Nov-26,24-Mar-27,25-Mar-27,0,-109,0,0,0,0,"CON-B01-5TH-1050, P-MDEL-1030","CON-B01-5TH-1070, AB-SUB-B01-5TH-1010, AB-SUB-B01-5TH-1020, AB-SUB-B01-5TH-1030, CON-B01-6TH-1000",0,0%,Yes,Yes
0,CON-B01-6TH-1000,"Scaffolding works for Walls, Col. & Cores (B01) (6th)",The Big - P.01 - UP-24-MAY-26.CON.P02.B01.SUP.6thF,The Big - P.01 - UP-24-MAY-26,4,4,14-Nov-26,17-Nov-26,27-Mar-27,30-Mar-27,0,-109,0,0,0,0,CON-B01-5TH-1060,"CON-B01-6TH-1010, CON-B01-6TH-1010",0,0%,Yes,Yes
0,CON-B04-5TH-1050,"RFT for Slabs, Beams & Stairs (B04) (5th)",The Big - P.01 - UP-24-MAY-26.CON.P01.B04.SUP.5thF,The Big - P.01 - UP-24-MAY-26,10,10,14-Nov-26,24-Nov-26,13-Mar-27,23-Mar-27,0,-97,0,0,0,0,"CON-B04-5TH-1040, CON-B04-5TH-1040, E-APP-B04-5TH-1010, E-APP-B04-5TH-1020, E-APP-B04-5TH-1030, P-MDEL-1080",CON-B04-5TH-1060,0,0%,Yes,No
0,CON-B01-6TH-1010,"RFT for Walls, Col. & Cores (B01) (6th)",The Big - P.01 - UP-24-MAY-26.CON.P02.B01.SUP.6thF,The Big - P.01 - UP-24-MAY-26,6,6,17-Nov-26,23-Nov-26,30-Mar-27,5-Apr-27,0,-109,0,0,0,1,"CON-B01-6TH-1000, CON-B01-6TH-1000, E-APP-B01-6TH-1000, P-MDEL-1070","CON-B01-6TH-1020, CON-B01-6TH-1020",1,0%,Yes,Yes
0,CON-B01-6TH-1020,"Shuttering for Walls, Col. & Cores (B01) (6th)",The Big - P.01 - UP-24-MAY-26.CON.P02.B01.SUP.6thF,The Big - P.01 - UP-24-MAY-26,6,6,21-Nov-26,26-Nov-26,3-Apr-27,8-Apr-27,0,-109,0,0,0,0,"CON-B01-6TH-1010, CON-B01-6TH-1010, E-APP-B01-6TH-1000",CON-B01-6TH-1030,0,0%,Yes,Yes
0,CON-B04-5TH-1060,"Pouring for Slabs, Beams & Stairs (B04) (5th)",The Big - P.01 - UP-24-MAY-26.CON.P01.B04.SUP.5thF,The Big - P.01 - UP-24-MAY-26,1,1,25-Nov-26,25-Nov-26,24-Mar-27,24-Mar-27,0,-97,0,0,0,0,"CON-B04-5TH-1050, P-MDEL-1030","CON-B04-5TH-1070, CON-B04-5TH-1080, AB-SUB-B04-5TH-1010, AB-SUB-B04-5TH-1020, AB-SUB-B04-5TH-1030",0,0%,Yes,No
0,CON-B03-3RD-1060,"Pouring for Slabs, Beams & Stairs (B03) (3rd)",The Big - P.01 - UP-24-MAY-26.CON.P01.B03.SUP.3rdF,The Big - P.01 - UP-24-MAY-26,3,3,26-Nov-26,29-Nov-26,7-Mar-27,13-Mar-27,0,-84,0,0,0,0,"CON-B03-3RD-1050, P-MDEL-1030","CON-B03-3RD-1070, CON-B03-3RD-1080, AB-SUB-B03-3RD-1010, AB-SUB-B03-3RD-1020, AB-SUB-B03-3RD-1030",0,0%,Yes,No
0,CON-B04-5TH-1070,"Curing for Slabs, Beams & Stairs (B04) (5th)",The Big - P.01 - UP-24-MAY-26.CON.P01.B04.SUP.5thF,The Big - P.01 - UP-24-MAY-26,3,3,26-Nov-26,28-Nov-26,25-Mar-27,27-Mar-27,0,-119,0,0,0,0,CON-B04-5TH-1060,CON-B04-6TH-1000,0,0%,Yes,No
0,CON-B01-6TH-1030,"Pouring for Walls, Col. & Cores (B01) (6th)",The Big - P.01 - UP-24-MAY-26.CON.P02.B01.SUP.6thF,The Big - P.01 - UP-24-MAY-26,2,2,29-Nov-26,30-Nov-26,11-Apr-27,12-Apr-27,0,-109,0,0,0,0,"CON-B01-6TH-1020, P-MDEL-1030","CON-B01-6TH-1040, AB-SUB-B01-6TH-1000",0,0%,Yes,Yes
0,CON-B04-6TH-1000,"Scaffolding works for Walls, Col. & Cores (B04) (6th)",The Big - P.01 - UP-24-MAY-26.CON.P01.B04.SUP.6thF,The Big - P.01 - UP-24-MAY-26,3,3,29-Nov-26,1-Dec-26,28-Mar-27,30-Mar-27,0,-97,0,0,0,0,CON-B04-5TH-1070,"CON-B04-6TH-1010, CON-B04-6TH-1010",0,0%,Yes,No
0,CON-B03-3RD-1070,"Curing for Slabs, Beams & Stairs (B03) (3rd)",The Big - P.01 - UP-24-MAY-26.CON.P01.B03.SUP.3rdF,The Big - P.01 - UP-24-MAY-26,3,3,30-Nov-26,2-Dec-26,14-Mar-27,16-Mar-27,0,-104,0,0,0,0,CON-B03-3RD-1060,CON-B03-4TH-1000,0,0%,Yes,No
0,CON-B01-6TH-1040,"Shuttering for Slabs, Beams & Stairs (B01) (6th)",The Big - P.01 - UP-24-MAY-26.CON.P02.B01.SUP.6thF,The Big - P.01 - UP-24-MAY-26,9,9,1-Dec-26,10-Dec-26,13-Apr-27,22-Apr-27,0,-109,0,0,0,0,"E-APP-B01-6TH-1030, E-APP-B01-6TH-1020, E-APP-B01-6TH-1010, CON-B01-6TH-1030, CON-B01-5TH-1080","CON-B01-6TH-1050, CON-B01-6TH-1050",0,0%,Yes,Yes
0,CON-B04-6TH-1010,"RFT for Walls, Col. & Cores (B04) (6th)",The Big - P.01 - UP-24-MAY-26.CON.P01.B04.SUP.6thF,The Big - P.01 - UP-24-MAY-26,5,5,2-Dec-26,7-Dec-26,31-Mar-27,5-Apr-27,0,-97,0,0,0,1,"CON-B04-6TH-1000, CON-B04-6TH-1000, E-APP-B04-6TH-1000, P-MDEL-1070","CON-B04-6TH-1020, CON-B04-6TH-1020",1,0%,Yes,No
0,CON-B04-6TH-1020,"Shuttering for Walls, Col. & Cores (B04) (6th)",The Big - P.01 - UP-24-MAY-26.CON.P01.B04.SUP.6thF,The Big - P.01 - UP-24-MAY-26,5,5,5-Dec-26,9-Dec-26,3-Apr-27,7-Apr-27,0,-97,0,0,0,0,"CON-B04-6TH-1010, CON-B04-6TH-1010, E-APP-B04-6TH-1000",CON-B04-6TH-1030,0,0%,Yes,No
0,CON-B01-6TH-1050,"RFT for Slabs, Beams & Stairs (B01) (6th)",The Big - P.01 - UP-24-MAY-26.CON.P02.B01.SUP.6thF,The Big - P.01 - UP-24-MAY-26,9,9,6-Dec-26,15-Dec-26,18-Apr-27,27-Apr-27,0,-109,0,0,0,0,"CON-B01-6TH-1040, CON-B01-6TH-1040, E-APP-B01-6TH-1010, E-APP-B01-6TH-1020, E-APP-B01-6TH-1030, P-MDEL-1070",CON-B01-6TH-1060,0,0%,Yes,Yes
0,CON-B04-6TH-1030,"Pouring for Walls, Col. & Cores (B04) (6th)",The Big - P.01 - UP-24-MAY-26.CON.P01.B04.SUP.6thF,The Big - P.01 - UP-24-MAY-26,1,1,10-Dec-26,10-Dec-26,8-Apr-27,8-Apr-27,0,-97,0,0,0,0,"CON-B04-6TH-1020, P-MDEL-1030","CON-B04-6TH-1040, AB-SUB-B04-6TH-1000",0,0%,Yes,No
0,CON-B04-6TH-1040,"Shuttering for Slabs, Beams & Stairs (B04) (6th)",The Big - P.01 - UP-24-MAY-26.CON.P01.B04.SUP.6thF,The Big - P.01 - UP-24-MAY-26,8,8,12-Dec-26,20-Dec-26,10-Apr-27,18-Apr-27,0,-97,0,0,0,0,"E-APP-B04-6TH-1030, E-APP-B04-6TH-1020, E-APP-B04-6TH-1010, CON-B04-6TH-1030, CON-B04-5TH-1080","CON-B04-6TH-1050, CON-B04-6TH-1050",0,0%,Yes,No
0,CON-B03-4TH-1000,"Scaffolding works for Walls, Col. & Cores (B03) (4th)",The Big - P.01 - UP-24-MAY-26.CON.P01.B03.SUP.4thF,The Big - P.01 - UP-24-MAY-26,5,5,13-Dec-26,17-Dec-26,27-Mar-27,31-Mar-27,0,-84,0,0,0,0,CON-B03-3RD-1070,"CON-B03-4TH-1010, CON-B03-4TH-1010",0,0%,Yes,No
0,CON-B04-6TH-1050,"RFT for Slabs, Beams & Stairs (B04) (6th)",The Big - P.01 - UP-24-MAY-26.CON.P01.B04.SUP.6thF,The Big - P.01 - UP-24-MAY-26,8,8,15-Dec-26,23-Dec-26,13-Apr-27,21-Apr-27,0,-97,0,0,0,0,"CON-B04-6TH-1040, CON-B04-6TH-1040, E-APP-B04-6TH-1010, E-APP-B04-6TH-1020, E-APP-B04-6TH-1030, P-MDEL-1070",CON-B04-6TH-1060,0,0%,Yes,No
0,CON-B01-6TH-1060,"Pouring for Slabs, Beams & Stairs (B01) (6th)",The Big - P.01 - UP-24-MAY-26.CON.P02.B01.SUP.6thF,The Big - P.01 - UP-24-MAY-26,2,2,16-Dec-26,17-Dec-26,28-Apr-27,29-Apr-27,0,-109,0,0,0,0,"CON-B01-6TH-1050, P-MDEL-1030","CON-B01-6TH-1070, AB-SUB-B01-6TH-1010, AB-SUB-B01-6TH-1020, AB-SUB-B01-6TH-1030, CON-B01-7TH-1000",0,0%,Yes,Yes
0,CON-B03-4TH-1010,"RFT for Walls, Col. & Cores (B03) (4th)",The Big - P.01 - UP-24-MAY-26.CON.P01.B03.SUP.4thF,The Big - P.01 - UP-24-MAY-26,12,12,16-Dec-26,29-Dec-26,30-Mar-27,12-Apr-27,0,-84,0,0,0,1,"CON-B03-4TH-1000, CON-B03-4TH-1000, E-APP-B03-4TH-1000, P-MDEL-1090","CON-B03-4TH-1020, CON-B03-4TH-1020",1,0%,Yes,No
0,CON-B01-7TH-1000,"Scaffolding works for Walls, Col. & Cores (B01) (7th)",The Big - P.01 - UP-24-MAY-26.CON.P02.B01.SUP.7thF,The Big - P.01 - UP-24-MAY-26,3,3,19-Dec-26,21-Dec-26,1-May-27,3-May-27,0,-109,0,0,0,0,CON-B01-6TH-1060,"CON-B01-7TH-1010, CON-B01-7TH-1010",0,0%,Yes,Yes
0,CON-B01-7TH-1010,"RFT for Walls, Col. & Cores (B01) (7th)",The Big - P.01 - UP-24-MAY-26.CON.P02.B01.SUP.7thF,The Big - P.01 - UP-24-MAY-26,5,5,21-Dec-26,26-Dec-26,3-May-27,8-May-27,0,-109,0,0,0,0,"CON-B01-7TH-1000, CON-B01-7TH-1000, E-APP-B01-7TH-1000, P-MDEL-1190","CON-B01-7TH-1020, CON-B01-7TH-1020",0,0%,Yes,Yes
0,CON-B03-4TH-1020,"Shuttering for Walls, Col. & Cores (B03) (4th)",The Big - P.01 - UP-24-MAY-26.CON.P01.B03.SUP.4thF,The Big - P.01 - UP-24-MAY-26,12,12,21-Dec-26,3-Jan-27,4-Apr-27,17-Apr-27,0,-84,0,0,0,0,"CON-B03-4TH-1010, CON-B03-4TH-1010, E-APP-B03-4TH-1000",CON-B03-4TH-1030,0,0%,Yes,No
0,CON-B01-7TH-1020,"Shuttering for Walls, Col. & Cores (B01) (7th)",The Big - P.01 - UP-24-MAY-26.CON.P02.B01.SUP.7thF,The Big - P.01 - UP-24-MAY-26,5,5,24-Dec-26,29-Dec-26,6-May-27,11-May-27,0,-109,0,0,0,0,"CON-B01-7TH-1010, CON-B01-7TH-1010, E-APP-B01-7TH-1000",CON-B01-7TH-1030,0,0%,Yes,Yes
0,CON-B04-6TH-1060,"Pouring for Slabs, Beams & Stairs (B04) (6th)",The Big - P.01 - UP-24-MAY-26.CON.P01.B04.SUP.6thF,The Big - P.01 - UP-24-MAY-26,1,1,24-Dec-26,24-Dec-26,22-Apr-27,22-Apr-27,0,-97,0,0,0,0,"CON-B04-6TH-1050, P-MDEL-1030","CON-B04-6TH-1070, CON-B04-6TH-1080, AB-SUB-B04-6TH-1010, AB-SUB-B04-6TH-1020, AB-SUB-B04-6TH-1030",0,0%,Yes,No
0,CON-B04-6TH-1070,"Curing for Slabs, Beams & Stairs (B04) (6th)",The Big - P.01 - UP-24-MAY-26.CON.P01.B04.SUP.6thF,The Big - P.01 - UP-24-MAY-26,3,3,25-Dec-26,27-Dec-26,23-Apr-27,25-Apr-27,0,-119,0,0,0,0,CON-B04-6TH-1060,CON-B04-7TH-1000,0,0%,Yes,No
0,CON-B04-7TH-1000,"Scaffolding works for Walls, Col. & Cores (B04) (7th)",The Big - P.01 - UP-24-MAY-26.CON.P01.B04.SUP.7thF,The Big - P.01 - UP-24-MAY-26,4,4,28-Dec-26,31-Dec-26,26-Apr-27,29-Apr-27,0,-97,0,0,0,0,CON-B04-6TH-1070,"CON-B04-7TH-1010, CON-B04-7TH-1010",0,0%,Yes,No
0,CON-B01-7TH-1030,"Pouring for Walls, Col. & Cores (B01) (7th)",The Big - P.01 - UP-24-MAY-26.CON.P02.B01.SUP.7thF,The Big - P.01 - UP-24-MAY-26,2,2,31-Dec-26,2-Jan-27,13-May-27,15-May-27,0,-109,0,0,0,0,"CON-B01-7TH-1020, P-MDEL-1030","CON-B01-7TH-1040, AB-SUB-B01-7TH-1000",0,0%,Yes,Yes
0,CON-B04-7TH-1010,"RFT for Walls, Col. & Cores (B04) (7th)",The Big - P.01 - UP-24-MAY-26.CON.P01.B04.SUP.7thF,The Big - P.01 - UP-24-MAY-26,5,5,31-Dec-26,5-Jan-27,29-Apr-27,4-May-27,0,-97,0,0,0,1,"CON-B04-7TH-1000, CON-B04-7TH-1000, E-APP-B04-7TH-1000, P-MDEL-1190","CON-B04-7TH-1020, CON-B04-7TH-1020",1,0%,Yes,No
0,CON-B01-7TH-1040,"Shuttering for Slabs, Beams & Stairs (B01) (7th)",The Big - P.01 - UP-24-MAY-26.CON.P02.B01.SUP.7thF,The Big - P.01 - UP-24-MAY-26,9,9,3-Jan-27,13-Jan-27,16-May-27,25-May-27,0,-109,0,0,0,0,"E-APP-B01-7TH-1030, E-APP-B01-7TH-1020, E-APP-B01-7TH-1010, CON-B01-7TH-1030, CON-B01-6TH-1080","CON-B01-7TH-1050, CON-B01-7TH-1050",0,0%,Yes,Yes
0,CON-B04-7TH-1020,"Shuttering for Walls, Col. & Cores (B04) (7th)",The Big - P.01 - UP-24-MAY-26.CON.P01.B04.SUP.7thF,The Big - P.01 - UP-24-MAY-26,5,5,3-Jan-27,9-Jan-27,2-May-27,6-May-27,0,-97,0,0,0,0,"CON-B04-7TH-1010, CON-B04-7TH-1010, E-APP-B04-7TH-1000",CON-B04-7TH-1030,0,0%,Yes,No
0,CON-B03-4TH-1030,"Pouring for Walls, Col. & Cores (B03) (4th)",The Big - P.01 - UP-24-MAY-26.CON.P01.B03.SUP.4thF,The Big - P.01 - UP-24-MAY-26,2,2,4-Jan-27,5-Jan-27,18-Apr-27,19-Apr-27,0,-84,0,0,0,0,"CON-B03-4TH-1020, P-MDEL-1030","CON-B03-4TH-1040, AB-SUB-B03-4TH-1000",0,0%,Yes,No
0,CON-B01-7TH-1050,"RFT for Slabs, Beams & Stairs (B01) (7th)",The Big - P.01 - UP-24-MAY-26.CON.P02.B01.SUP.7thF,The Big - P.01 - UP-24-MAY-26,9,9,6-Jan-27,17-Jan-27,19-May-27,29-May-27,0,-109,0,0,0,0,"CON-B01-7TH-1040, CON-B01-7TH-1040, E-APP-B01-7TH-1010, E-APP-B01-7TH-1020, E-APP-B01-7TH-1030, P-MDEL-1190",CON-B01-7TH-1060,0,0%,Yes,Yes
0,CON-B03-4TH-1040,"Shuttering for Slabs, Beams & Stairs (B03) (4th)",The Big - P.01 - UP-24-MAY-26.CON.P01.B03.SUP.4thF,The Big - P.01 - UP-24-MAY-26,12,12,6-Jan-27,20-Jan-27,20-Apr-27,3-May-27,0,-84,0,0,0,0,"E-APP-B03-4TH-1030, E-APP-B03-4TH-1020, E-APP-B03-4TH-1010, CON-B03-4TH-1030, CON-B03-3RD-1080","CON-B03-4TH-1050, CON-B03-4TH-1050",0,0%,Yes,No
0,CON-B04-7TH-1030,"Pouring for Walls, Col. & Cores (B04) (7th)",The Big - P.01 - UP-24-MAY-26.CON.P01.B04.SUP.7thF,The Big - P.01 - UP-24-MAY-26,1,1,10-Jan-27,10-Jan-27,8-May-27,8-May-27,0,-97,0,0,0,0,"CON-B04-7TH-1020, P-MDEL-1030","CON-B04-7TH-1040, AB-SUB-B04-7TH-1000",0,0%,Yes,No
0,CON-B04-7TH-1040,"Shuttering for Slabs, Beams & Stairs (B04) (7th)",The Big - P.01 - UP-24-MAY-26.CON.P01.B04.SUP.7thF,The Big - P.01 - UP-24-MAY-26,8,8,11-Jan-27,19-Jan-27,9-May-27,17-May-27,0,-97,0,0,0,0,"E-APP-B04-7TH-1030, E-APP-B04-7TH-1020, E-APP-B04-7TH-1010, CON-B04-7TH-1030, CON-B04-6TH-1080","CON-B04-7TH-1050, CON-B04-7TH-1050",0,0%,Yes,No
0,CON-B03-4TH-1050,"RFT for Slabs, Beams & Stairs (B03) (4th)",The Big - P.01 - UP-24-MAY-26.CON.P01.B03.SUP.4thF,The Big - P.01 - UP-24-MAY-26,12,12,12-Jan-27,26-Jan-27,25-Apr-27,8-May-27,0,-84,0,0,0,0,"CON-B03-4TH-1040, CON-B03-4TH-1040, E-APP-B03-4TH-1010, E-APP-B03-4TH-1020, E-APP-B03-4TH-1030, P-MDEL-1090",CON-B03-4TH-1060,0,0%,Yes,No
0,CON-B04-7TH-1050,"RFT for Slabs, Beams & Stairs (B04) (7th)",The Big - P.01 - UP-24-MAY-26.CON.P01.B04.SUP.7thF,The Big - P.01 - UP-24-MAY-26,8,8,13-Jan-27,21-Jan-27,11-May-27,19-May-27,0,-97,0,0,0,0,"CON-B04-7TH-1040, CON-B04-7TH-1040, E-APP-B04-7TH-1010, E-APP-B04-7TH-1020, E-APP-B04-7TH-1030, P-MDEL-1190",CON-B04-7TH-1060,0,0%,Yes,No
0,CON-B01-7TH-1060,"Pouring for Slabs, Beams & Stairs (B01) (7th)",The Big - P.01 - UP-24-MAY-26.CON.P02.B01.SUP.7thF,The Big - P.01 - UP-24-MAY-26,2,2,18-Jan-27,19-Jan-27,30-May-27,31-May-27,0,-109,0,0,0,0,"CON-B01-7TH-1050, P-MDEL-1030","CON-B01-7TH-1070, AB-SUB-B01-7TH-1010, AB-SUB-B01-7TH-1020, AB-SUB-B01-7TH-1030, CON-B01-8TH-1000",0,0%,Yes,Yes
0,CON-B01-8TH-1000,"Scaffolding works for Walls, Col. & Cores (B01) (8th)",The Big - P.01 - UP-24-MAY-26.CON.P02.B01.SUP.8thF,The Big - P.01 - UP-24-MAY-26,3,3,20-Jan-27,23-Jan-27,1-Jun-27,3-Jun-27,0,-109,0,0,0,0,CON-B01-7TH-1060,"CON-B01-8TH-1010, CON-B01-8TH-1010",0,0%,Yes,Yes
0,CON-B01-8TH-1010,"RFT for Walls, Col. & Cores (B01) (8th)",The Big - P.01 - UP-24-MAY-26.CON.P02.B01.SUP.8thF,The Big - P.01 - UP-24-MAY-26,5,5,23-Jan-27,28-Jan-27,3-Jun-27,8-Jun-27,0,-109,0,0,0,1,"CON-B01-8TH-1000, CON-B01-8TH-1000, E-APP-B01-8TH-1000, P-MDEL-1180","CON-B01-8TH-1020, CON-B01-8TH-1020",1,0%,Yes,Yes
0,CON-B04-7TH-1060,"Pouring for Slabs, Beams & Stairs (B04) (7th)",The Big - P.01 - UP-24-MAY-26.CON.P01.B04.SUP.7thF,The Big - P.01 - UP-24-MAY-26,1,1,23-Jan-27,23-Jan-27,20-May-27,20-May-27,0,-97,0,0,0,0,"CON-B04-7TH-1050, P-MDEL-1030","CON-B04-7TH-1070, CON-B04-7TH-1080, AB-SUB-B04-7TH-1010, AB-SUB-B04-7TH-1020, AB-SUB-B04-7TH-1030",0,0%,Yes,No
0,CON-B04-7TH-1070,"Curing for Slabs, Beams & Stairs (B04) (7th)",The Big - P.01 - UP-24-MAY-26.CON.P01.B04.SUP.7thF,The Big - P.01 - UP-24-MAY-26,3,3,24-Jan-27,26-Jan-27,21-May-27,23-May-27,0,-117,0,0,0,0,CON-B04-7TH-1060,CON-B04-8TH-1000,0,0%,Yes,No
0,CON-B01-8TH-1020,"Shuttering for Walls, Col. & Cores (B01) (8th)",The Big - P.01 - UP-24-MAY-26.CON.P02.B01.SUP.8thF,The Big - P.01 - UP-24-MAY-26,5,5,26-Jan-27,31-Jan-27,6-Jun-27,10-Jun-27,0,-109,0,0,0,0,"CON-B01-8TH-1010, CON-B01-8TH-1010, E-APP-B01-8TH-1000",CON-B01-8TH-1030,0,0%,Yes,Yes
0,CON-B03-4TH-1060,"Pouring for Slabs, Beams & Stairs (B03) (4th)",The Big - P.01 - UP-24-MAY-26.CON.P01.B03.SUP.4thF,The Big - P.01 - UP-24-MAY-26,3,3,27-Jan-27,30-Jan-27,9-May-27,11-May-27,0,-84,0,0,0,0,"CON-B03-4TH-1050, P-MDEL-1030","CON-B03-4TH-1070, CON-B03-4TH-1080, AB-SUB-B03-4TH-1010, AB-SUB-B03-4TH-1020, AB-SUB-B03-4TH-1030",0,0%,Yes,No
0,CON-B04-8TH-1000,"Scaffolding works for Walls, Col. & Cores (B04) (8th)",The Big - P.01 - UP-24-MAY-26.CON.P01.B04.SUP.8thF,The Big - P.01 - UP-24-MAY-26,4,4,27-Jan-27,31-Jan-27,24-May-27,27-May-27,0,-97,0,0,0,0,CON-B04-7TH-1070,"CON-B04-8TH-1010, CON-B04-8TH-1010",0,0%,Yes,No
0,CON-B04-8TH-1010,"RFT for Walls, Col. & Cores (B04) (8th)",The Big - P.01 - UP-24-MAY-26.CON.P01.B04.SUP.8thF,The Big - P.01 - UP-24-MAY-26,6,6,30-Jan-27,4-Feb-27,26-May-27,1-Jun-27,0,-97,0,0,0,1,"CON-B04-8TH-1000, CON-B04-8TH-1000, E-APP-B04-8TH-1000, P-MDEL-1180","CON-B04-8TH-1020, CON-B04-8TH-1020",1,0%,Yes,No
0,CON-B03-4TH-1070,"Curing for Slabs, Beams & Stairs (B03) (4th)",The Big - P.01 - UP-24-MAY-26.CON.P01.B03.SUP.4thF,The Big - P.01 - UP-24-MAY-26,3,3,31-Jan-27,2-Feb-27,12-May-27,14-May-27,0,-101,0,0,0,0,CON-B03-4TH-1060,CON-B03-RF-1000,0,0%,Yes,No
0,CON-B04-8TH-1020,"Shuttering for Walls, Col. & Cores (B04) (8th)",The Big - P.01 - UP-24-MAY-26.CON.P01.B04.SUP.8thF,The Big - P.01 - UP-24-MAY-26,6,6,1-Feb-27,7-Feb-27,29-May-27,3-Jun-27,0,-97,0,0,0,0,"CON-B04-8TH-1010, CON-B04-8TH-1010, E-APP-B04-8TH-1000",CON-B04-8TH-1030,0,0%,Yes,No
0,CON-B01-8TH-1030,"Pouring for Walls, Col. & Cores (B01) (8th)",The Big - P.01 - UP-24-MAY-26.CON.P02.B01.SUP.8thF,The Big - P.01 - UP-24-MAY-26,2,2,2-Feb-27,3-Feb-27,13-Jun-27,14-Jun-27,0,-109,0,0,0,0,"CON-B01-8TH-1020, P-MDEL-1030","CON-B01-8TH-1040, AB-SUB-B01-8TH-1000",0,0%,Yes,Yes
0,CON-B01-8TH-1040,"Shuttering for Slabs, Beams & Stairs (B01) (8th)",The Big - P.01 - UP-24-MAY-26.CON.P02.B01.SUP.8thF,The Big - P.01 - UP-24-MAY-26,8,8,4-Feb-27,13-Feb-27,15-Jun-27,23-Jun-27,0,-109,0,0,0,0,"E-APP-B01-8TH-1030, E-APP-B01-8TH-1020, E-APP-B01-8TH-1010, CON-B01-8TH-1030, CON-B01-7TH-1080","CON-B01-8TH-1050, CON-B01-8TH-1050",0,0%,Yes,Yes
0,CON-B01-8TH-1050,"RFT for Slabs, Beams & Stairs (B01) (8th)",The Big - P.01 - UP-24-MAY-26.CON.P02.B01.SUP.8thF,The Big - P.01 - UP-24-MAY-26,8,8,7-Feb-27,15-Feb-27,17-Jun-27,26-Jun-27,0,-109,0,0,0,0,"CON-B01-8TH-1040, CON-B01-8TH-1040, E-APP-B01-8TH-1010, E-APP-B01-8TH-1020, E-APP-B01-8TH-1030, P-MDEL-1180",CON-B01-8TH-1060,0,0%,Yes,Yes
0,CON-B04-8TH-1030,"Pouring for Walls, Col. & Cores (B04) (8th)",The Big - P.01 - UP-24-MAY-26.CON.P01.B04.SUP.8thF,The Big - P.01 - UP-24-MAY-26,1,1,8-Feb-27,8-Feb-27,5-Jun-27,5-Jun-27,0,-97,0,0,0,0,"CON-B04-8TH-1020, P-MDEL-1030","CON-B04-8TH-1040, AB-SUB-B04-8TH-1000",0,0%,Yes,No
0,CON-B04-8TH-1040,"Shuttering for Slabs, Beams & Stairs (B04) (8th)",The Big - P.01 - UP-24-MAY-26.CON.P01.B04.SUP.8thF,The Big - P.01 - UP-24-MAY-26,4,4,9-Feb-27,13-Feb-27,6-Jun-27,9-Jun-27,0,-97,0,0,0,0,"E-APP-B04-8TH-1030, E-APP-B04-8TH-1020, E-APP-B04-8TH-1010, CON-B04-8TH-1030, CON-B04-7TH-1080","CON-B04-8TH-1050, CON-B04-8TH-1050",0,0%,Yes,No
0,CON-B04-8TH-1050,"RFT for Slabs, Beams & Stairs (B04) (8th)",The Big - P.01 - UP-24-MAY-26.CON.P01.B04.SUP.8thF,The Big - P.01 - UP-24-MAY-26,6,6,11-Feb-27,17-Feb-27,8-Jun-27,14-Jun-27,0,-97,0,0,0,0,"CON-B04-8TH-1040, CON-B04-8TH-1040, E-APP-B04-8TH-1010, E-APP-B04-8TH-1020, E-APP-B04-8TH-1030, P-MDEL-1180",CON-B04-8TH-1060,0,0%,Yes,No
0,CON-B03-RF-1000,"Scaffolding works for Walls, Col. & Cores (B03) (RF)",The Big - P.01 - UP-24-MAY-26.CON.P01.B03.SUP.RF,The Big - P.01 - UP-24-MAY-26,2,2,13-Feb-27,14-Feb-27,25-May-27,26-May-27,0,-84,0,0,0,0,CON-B03-4TH-1070,CON-B03-RF-1010,0,0%,Yes,No
0,CON-B03-RF-1010,"RFT for Walls, Col. & Cores (B03) (RF)",The Big - P.01 - UP-24-MAY-26.CON.P01.B03.SUP.RF,The Big - P.01 - UP-24-MAY-26,2,2,15-Feb-27,16-Feb-27,27-May-27,29-May-27,0,-84,0,0,0,1,"CON-B03-RF-1000, E-APP-B03-RF-1000, P-MDEL-1200",CON-B03-RF-1020,1,0%,Yes,No
0,CON-B01-8TH-1060,"Pouring for Slabs, Beams & Stairs (B01) (8th)",The Big - P.01 - UP-24-MAY-26.CON.P02.B01.SUP.8thF,The Big - P.01 - UP-24-MAY-26,2,2,16-Feb-27,17-Feb-27,27-Jun-27,28-Jun-27,0,-109,0,0,0,0,"CON-B01-8TH-1050, P-MDEL-1030","CON-B01-8TH-1070, AB-SUB-B01-8TH-1010, AB-SUB-B01-8TH-1020, AB-SUB-B01-8TH-1030",0,0%,Yes,Yes
0,CON-B03-RF-1020,"Shuttering for Walls, Col. & Cores (B03) (RF)",The Big - P.01 - UP-24-MAY-26.CON.P01.B03.SUP.RF,The Big - P.01 - UP-24-MAY-26,2,2,17-Feb-27,18-Feb-27,30-May-27,31-May-27,0,-84,0,0,0,0,"CON-B03-RF-1010, E-APP-B03-RF-1000",CON-B03-RF-1030,0,0%,Yes,No
0,CON-B01-8TH-1070,"Curing for Slabs, Beams & Stairs (B01) (8th)",The Big - P.01 - UP-24-MAY-26.CON.P02.B01.SUP.8thF,The Big - P.01 - UP-24-MAY-26,3,3,18-Feb-27,20-Feb-27,29-Jun-27,1-Jul-27,0,-131,0,0,0,0,CON-B01-8TH-1060,"CON-B01-8TH-1080, CON-B01-9TH-1000",0,0%,Yes,Yes
0,CON-B04-8TH-1060,"Pouring for Slabs, Beams & Stairs (B04) (8th)",The Big - P.01 - UP-24-MAY-26.CON.P01.B04.SUP.8thF,The Big - P.01 - UP-24-MAY-26,1,1,18-Feb-27,18-Feb-27,15-Jun-27,15-Jun-27,0,-97,0,0,0,0,"CON-B04-8TH-1050, P-MDEL-1030","CON-B04-8TH-1070, CON-B04-8TH-1080, AB-SUB-B04-8TH-1010, AB-SUB-B04-8TH-1020, AB-SUB-B04-8TH-1030",0,0%,Yes,No
0,CON-B03-RF-1030,"Pouring for Walls, Col. & Cores (B03) (RF)",The Big - P.01 - UP-24-MAY-26.CON.P01.B03.SUP.RF,The Big - P.01 - UP-24-MAY-26,2,2,20-Feb-27,21-Feb-27,1-Jun-27,2-Jun-27,0,-84,0,0,0,0,"CON-B03-RF-1020, P-MDEL-1030","CON-B03-RF-1040, AB-SUB-B03-RF-1000",0,0%,Yes,No
0,CON-B03-RF-1040,"Shuttering for Slabs, Beams  (B03) (RF)",The Big - P.01 - UP-24-MAY-26.CON.P01.B03.SUP.RF,The Big - P.01 - UP-24-MAY-26,3,3,22-Feb-27,24-Feb-27,3-Jun-27,6-Jun-27,0,-84,0,0,0,0,"E-APP-B03-RF-1020, E-APP-B03-RF-1010, CON-B03-RF-1030",CON-B03-RF-1050,0,0%,Yes,No
0,CON-B03-RF-1050,"RFT for Slabs, Beams  (B03) (RF)",The Big - P.01 - UP-24-MAY-26.CON.P01.B03.SUP.RF,The Big - P.01 - UP-24-MAY-26,3,3,25-Feb-27,28-Feb-27,7-Jun-27,9-Jun-27,0,-84,0,0,0,0,"CON-B03-RF-1040, E-APP-B03-RF-1010, E-APP-B03-RF-1020, P-MDEL-1200",CON-B03-RF-1060,0,0%,Yes,No
0,CON-B03-RF-1060,"Pouring for Slabs, Beams  (B03) (RF)",The Big - P.01 - UP-24-MAY-26.CON.P01.B03.SUP.RF,The Big - P.01 - UP-24-MAY-26,2,2,1-Mar-27,2-Mar-27,10-Jun-27,12-Jun-27,0,-84,0,0,0,0,"CON-B03-RF-1050, P-MDEL-1030, CON-B03-4TH-1080","CON-B03-RF-1070, AB-SUB-B03-RF-1010, AB-SUB-B03-RF-1020",0,0%,Yes,No
0,CON-B01-8TH-1080,Dismantling Formwork (B01) (8th),The Big - P.01 - UP-24-MAY-26.CON.P02.B01.SUP.8thF,The Big - P.01 - UP-24-MAY-26,1,1,3-Mar-27,3-Mar-27,12-Jul-27,12-Jul-27,0,-131,0,0,0,0,CON-B01-8TH-1070,CON-B01-9TH-1060,0,0%,Yes,Yes
0,CON-B04-8TH-1080,Dismantling Formwork (B04) (8th),The Big - P.01 - UP-24-MAY-26.CON.P01.B04.SUP.8thF,The Big - P.01 - UP-24-MAY-26,1,1,3-Mar-27,3-Mar-27,28-Jun-27,28-Jun-27,0,-117,0,0,0,0,CON-B04-8TH-1060,CON-B04-RF-1060,0,0%,Yes,No
0,AB-SUB-B03-RF-1010,Submittal for Slabs Conc. Dim.  & RFT DWGs As-Built Drawing (B03) (RF),The Big - P.01 - UP-24-MAY-26.HO.1.S.P01.B03.SUP.RF,The Big - P.01 - UP-24-MAY-26,18,18,3-Mar-27,27-Mar-27,13-Jun-27,3-Jul-27,0,-84,0,0,0,0,CON-B03-RF-1060,"AB-APP-B03-RF-1010, AB-APP-B03-RF-1010",0,0%,Yes,No
0,AB-SUB-B03-RF-1020,Submittal for Beams Conc. Dim.  & RFT DWGs As-Built Drawing (B03) (RF),The Big - P.01 - UP-24-MAY-26.HO.1.S.P01.B03.SUP.RF,The Big - P.01 - UP-24-MAY-26,18,18,3-Mar-27,27-Mar-27,13-Jun-27,3-Jul-27,0,-84,0,0,0,0,CON-B03-RF-1060,"AB-APP-B03-RF-1020, AB-APP-B03-RF-1020",0,0%,Yes,No
0,CON-B01-9TH-1060,"Pouring for Slabs, Beams  (B01) (RF)",The Big - P.01 - UP-24-MAY-26.CON.P02.B01.SUP.RF,The Big - P.01 - UP-24-MAY-26,1,1,4-Mar-27,4-Mar-27,13-Jul-27,13-Jul-27,0,-109,0,0,0,0,"CON-B01-9TH-1050, P-MDEL-1030, CON-B01-8TH-1080","CON-B01-9TH-1070, AB-SUB-B01-RF-1010, AB-SUB-B01-RF-1020",0,0%,Yes,Yes
0,CON-B04-RF-1060,"Pouring for Slabs, Beams  (B04) (RF)",The Big - P.01 - UP-24-MAY-26.CON.P01.B04.SUP.RF,The Big - P.01 - UP-24-MAY-26,1,1,4-Mar-27,4-Mar-27,29-Jun-27,29-Jun-27,0,-97,0,0,0,0,"CON-B04-RF-1050, P-MDEL-1030, CON-B04-8TH-1080","CON-B04-RF-1070, AB-SUB-B04-RF-1010, AB-SUB-B04-RF-1020",0,0%,Yes,No
0,CON-B01-9TH-1070,"Curing for Slabs, Beams  (B01) (RF)",The Big - P.01 - UP-24-MAY-26.CON.P02.B01.SUP.RF,The Big - P.01 - UP-24-MAY-26,3,3,5-Mar-27,7-Mar-27,14-Jul-27,16-Jul-27,0,-131,0,0,0,0,CON-B01-9TH-1060,CON-B01-9TH-1080,0,0%,Yes,Yes
0,CON-B04-RF-1070,"Curing for Slabs, Beams  (B04) (RF)",The Big - P.01 - UP-24-MAY-26.CON.P01.B04.SUP.RF,The Big - P.01 - UP-24-MAY-26,3,3,5-Mar-27,7-Mar-27,30-Jun-27,2-Jul-27,0,-117,0,0,0,0,CON-B04-RF-1060,CON-B04-RF-1080,0,0%,Yes,No
0,AB-SUB-B04-RF-1010,Submittal for Slabs Conc. Dim.  & RFT DWGs As-Built Drawing (B04) (RF),The Big - P.01 - UP-24-MAY-26.HO.1.S.P01.B04.SUP.RF,The Big - P.01 - UP-24-MAY-26,11,11,6-Mar-27,21-Mar-27,30-Jun-27,12-Jul-27,0,-97,0,0,0,0,CON-B04-RF-1060,"AB-APP-B04-RF-1010, AB-APP-B04-RF-1010",0,0%,Yes,No
0,AB-SUB-B04-RF-1020,Submittal for Beams Conc. Dim.  & RFT DWGs As-Built Drawing (B04) (RF),The Big - P.01 - UP-24-MAY-26.HO.1.S.P01.B04.SUP.RF,The Big - P.01 - UP-24-MAY-26,11,11,6-Mar-27,21-Mar-27,30-Jun-27,12-Jul-27,0,-97,0,0,0,0,CON-B04-RF-1060,"AB-APP-B04-RF-1020, AB-APP-B04-RF-1020",0,0%,Yes,No
0,AB-SUB-B01-RF-1010,Submittal for Slabs Conc. Dim.  & RFT DWGs As-Built Drawing (B01) (RF),The Big - P.01 - UP-24-MAY-26.HO.1.S.P02.B01.SUP.RF,The Big - P.01 - UP-24-MAY-26,18,18,6-Mar-27,29-Mar-27,14-Jul-27,3-Aug-27,0,-109,0,0,0,0,CON-B01-9TH-1060,"AB-APP-B01-RF-1010, AB-APP-B01-RF-1010",0,0%,Yes,No
0,AB-SUB-B01-RF-1020,Submittal for Beams Conc. Dim.  & RFT DWGs As-Built Drawing (B01) (RF),The Big - P.01 - UP-24-MAY-26.HO.1.S.P02.B01.SUP.RF,The Big - P.01 - UP-24-MAY-26,18,18,6-Mar-27,29-Mar-27,14-Jul-27,3-Aug-27,0,-109,0,0,0,0,CON-B01-9TH-1060,"AB-APP-B01-RF-1020, AB-APP-B01-RF-1020",0,0%,Yes,No
0,CON-B01-9TH-1080,Dismantling Formwork (B01) (RF),The Big - P.01 - UP-24-MAY-26.CON.P02.B01.SUP.RF,The Big - P.01 - UP-24-MAY-26,1,1,13-Mar-27,13-Mar-27,22-Jul-27,22-Jul-27,1,-131,0,0,0,0,CON-B01-9TH-1070,HO-1010,0,0%,Yes,Yes
0,CON-B04-RF-1080,Dismantling Formwork (B04) (RF),The Big - P.01 - UP-24-MAY-26.CON.P01.B04.SUP.RF,The Big - P.01 - UP-24-MAY-26,1,1,13-Mar-27,13-Mar-27,8-Jul-27,8-Jul-27,1,-117,0,0,0,0,CON-B04-RF-1070,HO-1040,0,0%,Yes,No
0,AB-APP-B03-RF-1010,Approval for Slabs Conc. Dim.  & RFT DWGs As-Built Drawing  (B03) (RF),The Big - P.01 - UP-24-MAY-26.HO.1.A.P01.B03.SUP.RF,The Big - P.01 - UP-24-MAY-26,14,14,21-Mar-27,5-Apr-27,27-Jun-27,12-Jul-27,25,-84,0,0,0,0,"AB-SUB-B03-RF-1010, AB-SUB-B03-RF-1010",HO-1050,0,0%,Yes,No
0,AB-APP-B03-RF-1020,Approval for Beams Conc. Dim.  & RFT DWGs As-Built Drawing  (B03) (RF),The Big - P.01 - UP-24-MAY-26.HO.1.A.P01.B03.SUP.RF,The Big - P.01 - UP-24-MAY-26,14,14,21-Mar-27,5-Apr-27,27-Jun-27,12-Jul-27,25,-84,0,0,0,0,"AB-SUB-B03-RF-1020, AB-SUB-B03-RF-1020",HO-1050,0,0%,Yes,No
0,AB-APP-B01-RF-1010,Approval for Slabs Conc. Dim.  & RFT DWGs As-Built Drawing (B01) (RF),The Big - P.01 - UP-24-MAY-26.HO.1.A.P02.B01.SUP.RF,The Big - P.01 - UP-24-MAY-26,12,12,23-Mar-27,5-Apr-27,28-Jul-27,10-Aug-27,0,-109,0,0,0,0,"AB-SUB-B01-RF-1010, AB-SUB-B01-RF-1010",HO-1050,0,0%,Yes,No
0,AB-APP-B01-RF-1020,Approval for Beams Conc. Dim.  & RFT DWGs As-Built Drawing (B01) (RF),The Big - P.01 - UP-24-MAY-26.HO.1.A.P02.B01.SUP.RF,The Big - P.01 - UP-24-MAY-26,12,12,23-Mar-27,5-Apr-27,28-Jul-27,10-Aug-27,0,-109,0,0,0,0,"AB-SUB-B01-RF-1020, AB-SUB-B01-RF-1020",HO-1050,0,0%,Yes,No
0,AB-APP-B04-RF-1010,Approval for Slabs Conc. Dim.  & RFT DWGs As-Built Drawing (B04) (RF),The Big - P.01 - UP-24-MAY-26.HO.1.A.P01.B04.SUP.RF,The Big - P.01 - UP-24-MAY-26,12,12,23-Mar-27,5-Apr-27,14-Jul-27,27-Jul-27,12,-97,0,0,0,0,"AB-SUB-B04-RF-1010, AB-SUB-B04-RF-1010",HO-1050,0,0%,Yes,No
0,AB-APP-B04-RF-1020,Approval for  Beams Conc. Dim.  & RFT DWGs As-Built Drawing (B04) (RF),The Big - P.01 - UP-24-MAY-26.HO.1.A.P01.B04.SUP.RF,The Big - P.01 - UP-24-MAY-26,12,12,23-Mar-27,5-Apr-27,14-Jul-27,27-Jul-27,12,-97,0,0,0,0,"AB-SUB-B04-RF-1020, AB-SUB-B04-RF-1020",HO-1050,0,0%,Yes,No
0,HO-1010,Snag list for B01,The Big - P.01 - UP-24-MAY-26.HO.2,The Big - P.01 - UP-24-MAY-26,10,10,28-Mar-27,7-Apr-27,7-Aug-27,17-Aug-27,0,-113,0,0,0,0,"CON-B01-9TH-1080, CON-B01-SOG-1060",HO-1000,0,0%,Yes,Yes
0,HO-1040,Snag list for B04,The Big - P.01 - UP-24-MAY-26.HO.2,The Big - P.01 - UP-24-MAY-26,10,10,28-Mar-27,7-Apr-27,24-Jul-27,3-Aug-27,12,-101,0,0,0,0,"CON-B04-RF-1080, CON-B04-SOG-1060",HO-1000,0,0%,Yes,No
0,HO-1050,Snag list for As-Built,The Big - P.01 - UP-24-MAY-26.HO.2,The Big - P.01 - UP-24-MAY-26,2,2,6-Apr-27,7-Apr-27,11-Aug-27,12-Aug-27,5,-127,0,0,0,0,"AB-APP-B01-FOOT-1000, AB-APP-B01-FOOT-1020, AB-APP-B01-FOOT-1030, AB-APP-B02-FOOT-1000, AB-APP-B02-FOOT-1010, AB-APP-B02-FOOT-1020, AB-APP-B02-BAS2-1000, AB-APP-B02-BAS2-1020, AB-APP-B02-BAS2-1030, AB-APP-B02-BAS2-1010, AB-APP-B01-BAS2-1000, AB-APP-B01-BAS2-1030, AB-APP-B01-BAS2-1040, AB-APP-B01-BAS2-1010, AB-APP-B01-BAS2-1020, AB-APP-B02-BAS1-1000, AB-APP-B02-BAS1-1020, AB-APP-B02-BAS1-1030, AB-APP-B02-BAS1-1010, AB-APP-B01-BAS1-1000, AB-APP-B01-BAS1-1020, AB-APP-B01-BAS1-1030, AB-APP-B01-BAS1-1010, AB-APP-B01-BAS1-1040, AB-APP-B02-GR-1000, AB-APP-B02-GR-1020, AB-APP-B02-GR-1030, AB-APP-B02-GR-1010, AB-APP-B01-GR-1000, AB-APP-B01-GR-1020, AB-APP-B01-GR-1030, AB-APP-B01-GR-1010, AB-APP-B02-1ST-1000, AB-APP-B02-1ST-1010, AB-APP-B02-1ST-1020, AB-APP-B02-1ST-1030, AB-APP-B02-2ND-1000, AB-APP-B02-2ND-1010, AB-APP-B02-2ND-1020, AB-APP-B02-2ND-1030, AB-APP-B02-3RD-1000, AB-APP-B02-3RD-1010, AB-APP-B02-3RD-1020, AB-APP-B02-3RD-1030, AB-APP-B02-4TH-1000, AB-APP-B02-4TH-1010, AB-APP-B02-4TH-1020, AB-APP-B02-4TH-1030, AB-APP-B01-1ST-1000, AB-APP-B01-1ST-1010, AB-APP-B01-1ST-1020, AB-APP-B01-1ST-1030, AB-APP-B01-2ND-1000, AB-APP-B01-2ND-1010, AB-APP-B01-2ND-1020, AB-APP-B01-2ND-1030, AB-APP-B01-3RD-1000, AB-APP-B01-3RD-1010, AB-APP-B01-3RD-1020, AB-APP-B01-3RD-1030, AB-APP-B01-4TH-1000, AB-APP-B01-4TH-1010, AB-APP-B01-4TH-1020, AB-APP-B01-4TH-1030, AB-APP-B01-5TH-1000, AB-APP-B01-5TH-1010, AB-APP-B01-5TH-1020, AB-APP-B01-5TH-1030, AB-APP-B01-6TH-1000, AB-APP-B01-6TH-1010, AB-APP-B01-6TH-1020, AB-APP-B01-6TH-1030, AB-APP-B01-7TH-1000, AB-APP-B01-7TH-1010, AB-APP-B01-7TH-1020, AB-APP-B01-7TH-1030, AB-APP-B01-8TH-1000, AB-APP-B01-8TH-1010, AB-APP-B01-8TH-1020, AB-APP-B01-8TH-1030, AB-APP-B02-RF-1000, AB-APP-B02-RF-1010, AB-APP-B02-RF-1020, AB-APP-B01-RF-1000, AB-APP-B01-RF-1010, AB-APP-B01-RF-1020, AB-APP-B03-FOOT-1000, AB-APP-B03-FOOT-1010, AB-APP-B03-FOOT-1020, AB-APP-B04-FOOT-1000, AB-APP-B04-FOOT-1010, AB-APP-B04-FOOT-1020, AB-APP-B03-BAS2-1000, AB-APP-B03-BAS2-1020, AB-APP-B03-BAS2-1030, AB-APP-B03-BAS2-1010, AB-APP-B04-BAS2-1000, AB-APP-B04-BAS2-1030, AB-APP-B04-BAS2-1040, AB-APP-B04-BAS2-1010, AB-APP-B04-BAS2-1020, AB-APP-B03-BAS1-1000, AB-APP-B03-BAS1-1020, AB-APP-B03-BAS1-1030, AB-APP-B03-BAS1-1010, AB-APP-B04-BAS1-1000, AB-APP-B04-BAS1-1030, AB-APP-B04-BAS1-1040, AB-APP-B04-BAS1-1010, AB-APP-B04-BAS1-1020, AB-APP-B04-GR-1000, AB-APP-B04-GR-1010, AB-APP-B04-GR-1020, AB-APP-B04-GR-1030, AB-APP-B03-GR-1000, AB-APP-B03-GR-1010, AB-APP-B03-GR-1020, AB-APP-B03-GR-1030, AB-APP-B04-1ST-1000, AB-APP-B04-1ST-1010, AB-APP-B04-1ST-1020, AB-APP-B04-1ST-1030, AB-APP-B04-2ND-1000, AB-APP-B04-2ND-1010, AB-APP-B04-2ND-1020, AB-APP-B04-2ND-1030, AB-APP-B04-3TH-1000, AB-APP-B04-3TH-1010, AB-APP-B04-3TH-1020, AB-APP-B04-3TH-1030, AB-APP-B04-4TH-1000, AB-APP-B04-4TH-1010, AB-APP-B04-4TH-1020, AB-APP-B04-4TH-1030, AB-APP-B04-5TH-1000, AB-APP-B04-5TH-1010, AB-APP-B04-5TH-1020, AB-APP-B04-5TH-1030, AB-APP-B04-6TH-1000, AB-APP-B04-6TH-1010, AB-APP-B04-6TH-1020, AB-APP-B04-6TH-1030, AB-APP-B04-7TH-1000, AB-APP-B04-7TH-1010, AB-APP-B04-7TH-1020, AB-APP-B04-7TH-1030, AB-APP-B04-8TH-1000, AB-APP-B04-8TH-1010, AB-APP-B04-8TH-1020, AB-APP-B04-8TH-1030, AB-APP-B03-1ST-1000, AB-APP-B03-1ST-1010, AB-APP-B03-1ST-1020, AB-APP-B03-1ST-1030, AB-APP-B03-2ND-1000, AB-APP-B03-2ND-1010, AB-APP-B03-2ND-1020, AB-APP-B03-2ND-1030, AB-APP-B03-3RD-1000, AB-APP-B03-3RD-1010, AB-APP-B03-3RD-1020, AB-APP-B03-3RD-1030, AB-APP-B03-4TH-1000, AB-APP-B03-4TH-1010, AB-APP-B03-4TH-1020, AB-APP-B03-4TH-1030, AB-APP-B04-RF-1000, AB-APP-B04-RF-1010, AB-APP-B04-RF-1020, AB-APP-B03-RF-1000, AB-APP-B03-RF-1010, AB-APP-B03-RF-1020, AB-APP-B01-SOG-1000, AB-APP-B01-SOG-1010, AB-APP-B02-SOG-1000, AB-APP-B02-SOG-1010, AB-APP-B03-SOG-1000, AB-APP-B03-SOG-1010, AB-APP-B04-SOG-1000, AB-APP-B04-SOG-1010, AB-APP-B04-WT-1000, AB-APP-B04-WT-1010, AB-APP-B04-WT-1030, AB-APP-B04-WT-1040, AB-APP-B04-WT-1020, AB-APP-B01-REP-1000, AB-APP-B02-REP-1000, AB-APP-B03-REP-1000, AB-APP-B04-REP-1000, AB-APP-B03-FOOT-1030, AB-APP-B04-FOOT-1030, AB-APP-B01-FOOT-1010, AB-APP-B02-FOOT-1030",HO-1000,0,0%,Yes,No
0,HO-1000,Demobilization,The Big - P.01 - UP-24-MAY-26.HO.2,The Big - P.01 - UP-24-MAY-26,2,2,8-Apr-27,10-Apr-27,18-Aug-27,19-Aug-27,0,-113,0,0,0,0,"HO-1030, HO-1020, HO-1010, HO-1040, HO-1050",KD-MS-1050,0,0%,Yes,Yes
0,KD-MS-1050,Project Finish Date,The Big - P.01 - UP-24-MAY-26.KD.MI,The Big - P.01 - UP-24-MAY-26,0,0,,10-Apr-27,,19-Aug-27*,0,-131,0,0,0,0,HO-1000,,0,0%,Yes,Yes
